| id | wbs | name | work_face_id | structure_id | discipline | planned_start | planned_finish | duration_h | duration_d | calendar_id | crew_size | early_start | early_finish | late_start | late_finish | total_float_d | free_float_d | is_near_critical | iwp_id | trade_id | thermal_sensitive | quantity | quantity_unit | hold_point |
| --- | --- | --- | --- | --- | --- | --- | --- | --- | --- | --- | --- | --- | --- | --- | --- | --- | --- | --- | --- | --- | --- | --- | --- | --- |
| A-1001 | FAB2.FAB.01 | Layout & survey control — FAB2 L1 slab — bay A1 | WF-FAB2-01 | FAB2 | civil | 2026-07-27T07:00:00-07:00 | 2026-07-28T07:30:00-07:00 | 10.5 | 1.05 | CAL-6x10 | 3 | 2026-07-27T07:00:00-07:00 | 2026-07-28T07:30:00-07:00 | 2026-07-29T15:18:00-07:00 | 2026-07-30T15:48:00-07:00 | 2.83 | 0.0 | True | IWP-FAB2-01 |  |  |  |  |  |
| A-1002 | FAB2.FAB.01 | Formwork & rebar placement — FAB2 L1 slab — bay A1 | WF-FAB2-01 | FAB2 | structural | 2026-07-28T07:30:00-07:00 | 2026-07-30T15:36:00-07:00 | 28.1 | 2.81 | CAL-6x10 | 9 | 2026-07-28T07:30:00-07:00 | 2026-07-30T15:36:00-07:00 | 2026-07-30T15:48:00-07:00 | 2026-08-03T13:54:00-07:00 | 2.83 | 0.0 | True | IWP-FAB2-01 |  |  |  |  |  |
| A-1003 | FAB2.FAB.01 | Slab pour — FAB2 L1 slab — bay A1 | WF-FAB2-01 | FAB2 | structural | 2026-07-30T15:36:00-07:00 | 2026-07-31T14:24:00-07:00 | 8.8 | 0.88 | CAL-6x10 | 12 | 2026-07-30T15:36:00-07:00 | 2026-07-31T14:24:00-07:00 | 2026-08-03T13:54:00-07:00 | 2026-08-04T12:42:00-07:00 | 2.83 | 0.0 | True | IWP-FAB2-01 | concrete_cip_hot_weather | True | 372.7 | m3 | City of Phoenix inspector — reinforcing & embed inspection prior to pour |
| A-1004 | FAB2.FAB.01 | Slab finish & curing compound — FAB2 L1 slab — bay A1 | WF-FAB2-01 | FAB2 | structural | 2026-07-31T14:24:00-07:00 | 2026-08-03T06:06:00-07:00 | 11.7 | 1.17 | CAL-6x10 | 6 | 2026-07-31T14:24:00-07:00 | 2026-08-03T06:06:00-07:00 | 2026-08-13T06:06:00-07:00 | 2026-08-14T07:48:00-07:00 | 10.17 | 0.0 |  | IWP-FAB2-01 |  |  |  |  |  |
| A-1005 | FAB2.FAB.01 | Structural steel erection — FAB2 L1 slab — bay A1 | WF-FAB2-01 | FAB2 | structural | 2026-08-07T14:06:00-07:00 | 2026-08-13T07:24:00-07:00 | 43.3 | 4.33 | CAL-6x10 | 10 | 2026-08-07T14:06:00-07:00 | 2026-08-13T07:24:00-07:00 | 2026-08-19T15:48:00-07:00 | 2026-08-25T09:06:00-07:00 | 10.17 | 0.0 |  | IWP-FAB2-01 |  |  |  |  |  |
| A-1006 | FAB2.FAB.01 | Deck weld & shear stud installation — FAB2 L1 slab — bay A1 | WF-FAB2-01 | FAB2 | structural | 2026-08-13T07:24:00-07:00 | 2026-08-13T15:30:00-07:00 | 8.1 | 0.81 | CAL-6x10 | 4 | 2026-08-13T07:24:00-07:00 | 2026-08-13T15:30:00-07:00 | 2026-08-25T09:06:00-07:00 | 2026-08-26T07:12:00-07:00 | 10.17 | 0.0 |  | IWP-FAB2-01 | structural_welding_preheat | True | 181.9 | ea |  |
| A-1007 | FAB2.FAB.01 | Adhesive anchor installation — FAB2 L1 slab — bay A1 | WF-FAB2-01 | FAB2 | structural | 2026-08-13T15:30:00-07:00 | 2026-08-14T11:06:00-07:00 | 5.6 | 0.56 | CAL-6x10 | 3 | 2026-08-13T15:30:00-07:00 | 2026-08-14T11:06:00-07:00 | 2026-08-26T07:12:00-07:00 | 2026-08-26T12:48:00-07:00 | 10.17 | 0.0 |  | IWP-FAB2-01 | adhesive_anchor_epoxy | True | 467.6 | ea |  |
| A-1008 | FAB2.FAB.01 | Spray-applied fireproofing — FAB2 L1 slab — bay A1 | WF-FAB2-01 | FAB2 | structural | 2026-08-15T09:06:00-07:00 | 2026-08-17T09:00:00-07:00 | 9.9 | 0.99 | CAL-6x10 | 6 | 2026-08-15T09:06:00-07:00 | 2026-08-17T09:00:00-07:00 | 2026-08-27T10:48:00-07:00 | 2026-08-28T10:42:00-07:00 | 10.17 | 0.0 |  | IWP-FAB2-01 | sfrm_spray_applied_fireproofing | True | 3055.1 | m2 |  |
| A-1009 | FAB2.FAB.01 | Structural steel high-build coating — FAB2 L1 slab — bay A1 | WF-FAB2-01 | FAB2 | structural | 2026-08-19T13:00:00-07:00 | 2026-08-20T09:12:00-07:00 | 6.2 | 0.62 | CAL-6x10 | 5 | 2026-08-19T13:00:00-07:00 | 2026-08-20T09:12:00-07:00 | 2027-01-29T06:54:00-07:00 | 2027-01-29T13:06:00-07:00 | 133.39 | 0.0 |  | IWP-FAB2-01 | coating_epoxy_structural_steel | True | 4346.2 | m2 |  |
| A-1010 | FAB2.FAB.01 | MEP hanger & rough-in — FAB2 L1 slab — bay A1 | WF-FAB2-01 | FAB2 | mechanical | 2026-08-20T09:12:00-07:00 | 2026-08-22T15:30:00-07:00 | 26.3 | 2.63 | CAL-6x10 | 8 | 2026-08-20T09:12:00-07:00 | 2026-08-22T15:30:00-07:00 | 2027-01-29T13:06:00-07:00 | 2027-02-02T09:24:00-07:00 | 133.39 | 133.39 |  | IWP-FAB2-01 |  |  |  |  |  |
| A-1011 | FAB2.FAB.02 | Layout & survey control — FAB2 L1 slab — bay B1 | WF-FAB2-02 | FAB2 | civil | 2026-07-28T12:00:00-07:00 | 2026-07-29T13:18:00-07:00 | 11.3 | 1.13 | CAL-6x10 | 3 | 2026-07-28T12:00:00-07:00 | 2026-07-29T13:18:00-07:00 | 2026-07-29T14:00:00-07:00 | 2026-07-30T15:18:00-07:00 | 1.2 | 0.0 | True | IWP-FAB2-02 |  |  |  |  |  |
| A-1012 | FAB2.FAB.02 | Formwork & rebar placement — FAB2 L1 slab — bay B1 | WF-FAB2-02 | FAB2 | structural | 2026-07-29T13:18:00-07:00 | 2026-08-03T06:18:00-07:00 | 33.0 | 3.3 | CAL-6x10 | 9 | 2026-07-29T13:18:00-07:00 | 2026-08-03T06:18:00-07:00 | 2026-07-30T15:18:00-07:00 | 2026-08-04T08:18:00-07:00 | 1.2 | 0.0 | True | IWP-FAB2-02 |  |  |  |  |  |
| A-1013 | FAB2.FAB.02 | Slab pour — FAB2 L1 slab — bay B1 | WF-FAB2-02 | FAB2 | structural | 2026-08-03T06:18:00-07:00 | 2026-08-03T15:48:00-07:00 | 9.5 | 0.95 | CAL-6x10 | 12 | 2026-08-03T06:18:00-07:00 | 2026-08-03T15:48:00-07:00 | 2026-08-04T08:18:00-07:00 | 2026-08-05T07:48:00-07:00 | 1.2 | 0.0 | True | IWP-FAB2-02 | concrete_cip_hot_weather | True | 402.8 | m3 |  |
| A-1014 | FAB2.FAB.02 | Slab finish & curing compound — FAB2 L1 slab — bay B1 | WF-FAB2-02 | FAB2 | structural | 2026-08-03T15:48:00-07:00 | 2026-08-04T15:42:00-07:00 | 9.9 | 0.99 | CAL-6x10 | 6 | 2026-08-03T15:48:00-07:00 | 2026-08-04T15:42:00-07:00 | 2026-08-14T08:48:00-07:00 | 2026-08-15T08:42:00-07:00 | 9.3 | 0.0 |  | IWP-FAB2-02 |  |  |  |  |  |
| A-1015 | FAB2.FAB.02 | Structural steel erection — FAB2 L1 slab — bay B1 | WF-FAB2-02 | FAB2 | structural | 2026-08-10T13:42:00-07:00 | 2026-08-14T15:48:00-07:00 | 42.1 | 4.21 | CAL-6x10 | 10 | 2026-08-10T13:42:00-07:00 | 2026-08-14T15:48:00-07:00 | 2026-08-21T06:42:00-07:00 | 2026-08-26T08:48:00-07:00 | 9.3 | 0.0 |  | IWP-FAB2-02 |  |  |  |  |  |
| A-1016 | FAB2.FAB.02 | Deck weld & shear stud installation — FAB2 L1 slab — bay B1 | WF-FAB2-02 | FAB2 | structural | 2026-08-14T15:48:00-07:00 | 2026-08-15T13:54:00-07:00 | 8.1 | 0.81 | CAL-6x10 | 4 | 2026-08-14T15:48:00-07:00 | 2026-08-15T13:54:00-07:00 | 2026-08-26T08:48:00-07:00 | 2026-08-27T06:54:00-07:00 | 9.3 | 0.0 |  | IWP-FAB2-02 | structural_welding_preheat | True | 183.2 | ea |  |
| A-1017 | FAB2.FAB.02 | Adhesive anchor installation — FAB2 L1 slab — bay B1 | WF-FAB2-02 | FAB2 | structural | 2026-08-15T13:54:00-07:00 | 2026-08-17T09:48:00-07:00 | 5.9 | 0.59 | CAL-6x10 | 3 | 2026-08-15T13:54:00-07:00 | 2026-08-17T09:48:00-07:00 | 2026-08-27T06:54:00-07:00 | 2026-08-27T12:48:00-07:00 | 9.3 | 0.0 |  | IWP-FAB2-02 | adhesive_anchor_epoxy | True | 496.8 | ea |  |
| A-1018 | FAB2.FAB.02 | Spray-applied fireproofing — FAB2 L1 slab — bay B1 | WF-FAB2-02 | FAB2 | structural | 2026-08-18T07:48:00-07:00 | 2026-08-19T08:54:00-07:00 | 11.1 | 1.11 | CAL-6x10 | 6 | 2026-08-18T07:48:00-07:00 | 2026-08-19T08:54:00-07:00 | 2026-08-28T10:48:00-07:00 | 2026-08-29T11:54:00-07:00 | 9.3 | 0.0 |  | IWP-FAB2-02 | sfrm_spray_applied_fireproofing | True | 3427.0 | m2 |  |
| A-1019 | FAB2.FAB.02 | Structural steel high-build coating — FAB2 L1 slab — bay B1 | WF-FAB2-02 | FAB2 | structural | 2026-08-21T12:54:00-07:00 | 2026-08-22T09:18:00-07:00 | 6.4 | 0.64 | CAL-6x10 | 5 | 2026-08-21T12:54:00-07:00 | 2026-08-22T09:18:00-07:00 | 2027-01-28T11:24:00-07:00 | 2027-01-29T07:48:00-07:00 | 130.85 | 0.0 |  | IWP-FAB2-02 | coating_epoxy_structural_steel | True | 4448.9 | m2 |  |
| A-1020 | FAB2.FAB.02 | MEP hanger & rough-in — FAB2 L1 slab — bay B1 | WF-FAB2-02 | FAB2 | mechanical | 2026-08-22T09:18:00-07:00 | 2026-08-26T10:54:00-07:00 | 31.6 | 3.16 | CAL-6x10 | 8 | 2026-08-22T09:18:00-07:00 | 2026-08-26T10:54:00-07:00 | 2027-01-29T07:48:00-07:00 | 2027-02-02T09:24:00-07:00 | 130.85 | 130.85 |  | IWP-FAB2-02 |  |  |  |  |  |
| A-1021 | FAB2.FAB.03 | Layout & survey control — FAB2 L1 slab — bay C1 | WF-FAB2-03 | FAB2 | civil | 2026-07-29T11:00:00-07:00 | 2026-07-30T11:18:00-07:00 | 10.3 | 1.03 | CAL-6x10 | 3 | 2026-07-29T11:00:00-07:00 | 2026-07-30T11:18:00-07:00 | 2026-07-31T06:18:00-07:00 | 2026-08-01T06:36:00-07:00 | 1.53 | 0.0 | True | IWP-FAB2-03 |  |  |  |  |  |
| A-1022 | FAB2.FAB.03 | Formwork & rebar placement — FAB2 L1 slab — bay C1 | WF-FAB2-03 | FAB2 | structural | 2026-07-30T11:18:00-07:00 | 2026-08-03T11:00:00-07:00 | 29.7 | 2.97 | CAL-6x10 | 9 | 2026-07-30T11:18:00-07:00 | 2026-08-03T11:00:00-07:00 | 2026-08-01T06:36:00-07:00 | 2026-08-05T06:18:00-07:00 | 1.53 | 0.0 | True | IWP-FAB2-03 |  |  |  |  |  |
| A-1023 | FAB2.FAB.03 | Slab pour — FAB2 L1 slab — bay C1 | WF-FAB2-03 | FAB2 | structural | 2026-08-03T11:00:00-07:00 | 2026-08-04T09:00:00-07:00 | 8.0 | 0.8 | CAL-6x10 | 12 | 2026-08-03T11:00:00-07:00 | 2026-08-04T09:00:00-07:00 | 2026-08-05T06:18:00-07:00 | 2026-08-05T14:18:00-07:00 | 1.53 | 0.0 | True | IWP-FAB2-03 | concrete_cip_hot_weather | True | 340.4 | m3 | City of Phoenix inspector — reinforcing & embed inspection prior to pour |
| A-1024 | FAB2.FAB.03 | Slab finish & curing compound — FAB2 L1 slab — bay C1 | WF-FAB2-03 | FAB2 | structural | 2026-08-04T09:00:00-07:00 | 2026-08-05T07:42:00-07:00 | 8.7 | 0.87 | CAL-6x10 | 6 | 2026-08-04T09:00:00-07:00 | 2026-08-05T07:42:00-07:00 | 2026-08-15T07:24:00-07:00 | 2026-08-17T06:06:00-07:00 | 9.84 | 0.0 |  | IWP-FAB2-03 |  |  |  |  |  |
| A-1025 | FAB2.FAB.03 | Structural steel erection — FAB2 L1 slab — bay C1 | WF-FAB2-03 | FAB2 | structural | 2026-08-10T15:42:00-07:00 | 2026-08-15T11:18:00-07:00 | 45.6 | 4.56 | CAL-6x10 | 10 | 2026-08-10T15:42:00-07:00 | 2026-08-15T11:18:00-07:00 | 2026-08-21T14:06:00-07:00 | 2026-08-27T09:42:00-07:00 | 9.84 | 0.0 |  | IWP-FAB2-03 |  |  |  |  |  |
| A-1026 | FAB2.FAB.03 | Deck weld & shear stud installation — FAB2 L1 slab — bay C1 | WF-FAB2-03 | FAB2 | structural | 2026-08-15T11:18:00-07:00 | 2026-08-17T09:00:00-07:00 | 7.7 | 0.77 | CAL-6x10 | 4 | 2026-08-15T11:18:00-07:00 | 2026-08-17T09:00:00-07:00 | 2026-08-27T09:42:00-07:00 | 2026-08-28T07:24:00-07:00 | 9.84 | 0.0 |  | IWP-FAB2-03 | structural_welding_preheat | True | 172.6 | ea |  |
| A-1027 | FAB2.FAB.03 | Adhesive anchor installation — FAB2 L1 slab — bay C1 | WF-FAB2-03 | FAB2 | structural | 2026-08-17T09:00:00-07:00 | 2026-08-17T14:24:00-07:00 | 5.4 | 0.54 | CAL-6x10 | 3 | 2026-08-17T09:00:00-07:00 | 2026-08-17T14:24:00-07:00 | 2026-08-28T07:24:00-07:00 | 2026-08-28T12:48:00-07:00 | 9.84 | 0.54 |  | IWP-FAB2-03 | adhesive_anchor_epoxy | True | 451.5 | ea |  |
| A-1028 | FAB2.FAB.03 | Spray-applied fireproofing — FAB2 L1 slab — bay C1 | WF-FAB2-03 | FAB2 | structural | 2026-08-19T07:48:00-07:00 | 2026-08-20T07:48:00-07:00 | 10.0 | 1.0 | CAL-6x10 | 6 | 2026-08-19T07:48:00-07:00 | 2026-08-20T07:48:00-07:00 | 2026-08-29T10:48:00-07:00 | 2026-08-31T10:48:00-07:00 | 9.3 | 0.0 |  | IWP-FAB2-03 | sfrm_spray_applied_fireproofing | True | 3099.7 | m2 | Special inspector — SFRM thickness & density verification |
| A-1029 | FAB2.FAB.03 | Structural steel high-build coating — FAB2 L1 slab — bay C1 | WF-FAB2-03 | FAB2 | structural | 2026-08-22T11:48:00-07:00 | 2026-08-24T07:30:00-07:00 | 5.7 | 0.57 | CAL-6x10 | 5 | 2026-08-22T11:48:00-07:00 | 2026-08-24T07:30:00-07:00 | 2027-01-28T08:30:00-07:00 | 2027-01-28T14:12:00-07:00 | 129.67 | 0.0 |  | IWP-FAB2-03 | coating_epoxy_structural_steel | True | 3992.0 | m2 |  |
| A-1030 | FAB2.FAB.03 | MEP hanger & rough-in — FAB2 L1 slab — bay C1 | WF-FAB2-03 | FAB2 | mechanical | 2026-08-24T07:30:00-07:00 | 2026-08-27T12:42:00-07:00 | 35.2 | 3.52 | CAL-6x10 | 8 | 2026-08-24T07:30:00-07:00 | 2026-08-27T12:42:00-07:00 | 2027-01-28T14:12:00-07:00 | 2027-02-02T09:24:00-07:00 | 129.67 | 129.67 |  | IWP-FAB2-03 |  |  |  |  |  |
| A-1031 | FAB2.FAB.04 | Layout & survey control — FAB2 L1 slab — bay D1 | WF-FAB2-04 | FAB2 | civil | 2026-07-30T10:00:00-07:00 | 2026-07-31T11:18:00-07:00 | 11.3 | 1.13 | CAL-6x10 | 3 | 2026-07-30T10:00:00-07:00 | 2026-07-31T11:18:00-07:00 | 2026-07-31T15:42:00-07:00 | 2026-08-03T07:00:00-07:00 | 1.57 | 0.0 | True | IWP-FAB2-04 |  |  |  |  |  |
| A-1032 | FAB2.FAB.04 | Formwork & rebar placement — FAB2 L1 slab — bay D1 | WF-FAB2-04 | FAB2 | structural | 2026-07-31T11:18:00-07:00 | 2026-08-04T13:12:00-07:00 | 31.9 | 3.19 | CAL-6x10 | 9 | 2026-07-31T11:18:00-07:00 | 2026-08-04T13:12:00-07:00 | 2026-08-03T07:00:00-07:00 | 2026-08-06T08:54:00-07:00 | 1.57 | 0.0 | True | IWP-FAB2-04 |  |  |  |  |  |
| A-1033 | FAB2.FAB.04 | Slab pour — FAB2 L1 slab — bay D1 | WF-FAB2-04 | FAB2 | structural | 2026-08-04T13:12:00-07:00 | 2026-08-05T11:54:00-07:00 | 8.7 | 0.87 | CAL-6x10 | 12 | 2026-08-04T13:12:00-07:00 | 2026-08-05T11:54:00-07:00 | 2026-08-06T08:54:00-07:00 | 2026-08-07T07:36:00-07:00 | 1.57 | 0.0 | True | IWP-FAB2-04 | concrete_cip_hot_weather | True | 370.7 | m3 | City of Phoenix inspector — reinforcing & embed inspection prior to pour |
| A-1034 | FAB2.FAB.04 | Slab finish & curing compound — FAB2 L1 slab — bay D1 | WF-FAB2-04 | FAB2 | structural | 2026-08-05T11:54:00-07:00 | 2026-08-06T13:18:00-07:00 | 11.4 | 1.14 | CAL-6x10 | 6 | 2026-08-05T11:54:00-07:00 | 2026-08-06T13:18:00-07:00 | 2026-08-17T12:24:00-07:00 | 2026-08-18T13:48:00-07:00 | 10.05 | 0.0 |  | IWP-FAB2-04 |  |  |  |  |  |
| A-1035 | FAB2.FAB.04 | Structural steel erection — FAB2 L1 slab — bay D1 | WF-FAB2-04 | FAB2 | structural | 2026-08-12T11:18:00-07:00 | 2026-08-17T09:42:00-07:00 | 38.4 | 3.84 | CAL-6x10 | 10 | 2026-08-12T11:18:00-07:00 | 2026-08-17T09:42:00-07:00 | 2026-08-24T11:48:00-07:00 | 2026-08-28T10:12:00-07:00 | 10.05 | 0.0 |  | IWP-FAB2-04 |  |  |  |  |  |
| A-1036 | FAB2.FAB.04 | Deck weld & shear stud installation — FAB2 L1 slab — bay D1 | WF-FAB2-04 | FAB2 | structural | 2026-08-17T09:42:00-07:00 | 2026-08-18T07:42:00-07:00 | 8.0 | 0.8 | CAL-6x10 | 4 | 2026-08-17T09:42:00-07:00 | 2026-08-18T07:42:00-07:00 | 2026-08-28T10:12:00-07:00 | 2026-08-29T08:12:00-07:00 | 10.05 | 0.0 |  | IWP-FAB2-04 | structural_welding_preheat | True | 180.5 | ea |  |
| A-1037 | FAB2.FAB.04 | Adhesive anchor installation — FAB2 L1 slab — bay D1 | WF-FAB2-04 | FAB2 | structural | 2026-08-18T07:42:00-07:00 | 2026-08-18T12:18:00-07:00 | 4.6 | 0.46 | CAL-6x10 | 3 | 2026-08-18T07:42:00-07:00 | 2026-08-18T12:18:00-07:00 | 2026-08-29T08:12:00-07:00 | 2026-08-29T12:48:00-07:00 | 10.05 | 0.75 |  | IWP-FAB2-04 | adhesive_anchor_epoxy | True | 387.9 | ea |  |
| A-1038 | FAB2.FAB.04 | Spray-applied fireproofing — FAB2 L1 slab — bay D1 | WF-FAB2-04 | FAB2 | structural | 2026-08-20T07:48:00-07:00 | 2026-08-21T07:18:00-07:00 | 9.5 | 0.95 | CAL-6x10 | 6 | 2026-08-20T07:48:00-07:00 | 2026-08-21T07:18:00-07:00 | 2026-08-31T10:48:00-07:00 | 2026-09-01T10:18:00-07:00 | 9.3 | 0.0 |  | IWP-FAB2-04 | sfrm_spray_applied_fireproofing | True | 2952.0 | m2 |  |
| A-1039 | FAB2.FAB.04 | Structural steel high-build coating — FAB2 L1 slab — bay D1 | WF-FAB2-04 | FAB2 | structural | 2026-08-24T11:18:00-07:00 | 2026-08-25T08:18:00-07:00 | 7.0 | 0.7 | CAL-6x10 | 5 | 2026-08-24T11:18:00-07:00 | 2026-08-25T08:18:00-07:00 | 2027-01-28T13:54:00-07:00 | 2027-01-29T10:54:00-07:00 | 129.26 | 0.0 |  | IWP-FAB2-04 | coating_epoxy_structural_steel | True | 4915.6 | m2 |  |
| A-1040 | FAB2.FAB.04 | MEP hanger & rough-in — FAB2 L1 slab — bay D1 | WF-FAB2-04 | FAB2 | mechanical | 2026-08-25T08:18:00-07:00 | 2026-08-28T06:48:00-07:00 | 28.5 | 2.85 | CAL-6x10 | 8 | 2026-08-25T08:18:00-07:00 | 2026-08-28T06:48:00-07:00 | 2027-01-29T10:54:00-07:00 | 2027-02-02T09:24:00-07:00 | 129.26 | 129.26 |  | IWP-FAB2-04 |  |  |  |  |  |
| A-1041 | FAB2.FAB.05 | Layout & survey control — FAB2 L2 deck — bay A2 | WF-FAB2-05 | FAB2 | civil | 2026-08-10T06:24:00-07:00 | 2026-08-11T07:00:00-07:00 | 10.6 | 1.06 | CAL-6x10 | 3 | 2026-08-10T06:24:00-07:00 | 2026-08-11T07:00:00-07:00 | 2026-08-12T14:42:00-07:00 | 2026-08-13T15:18:00-07:00 | 2.83 | 0.0 | True | IWP-FAB2-05 |  |  |  |  |  |
| A-1042 | FAB2.FAB.05 | Formwork & rebar placement — FAB2 L2 deck — bay A2 | WF-FAB2-05 | FAB2 | structural | 2026-08-11T07:00:00-07:00 | 2026-08-14T11:18:00-07:00 | 34.3 | 3.43 | CAL-6x10 | 9 | 2026-08-11T07:00:00-07:00 | 2026-08-14T11:18:00-07:00 | 2026-08-13T15:18:00-07:00 | 2026-08-18T09:36:00-07:00 | 2.83 | 0.0 | True | IWP-FAB2-05 |  |  |  |  |  |
| A-1043 | FAB2.FAB.05 | Slab pour — FAB2 L2 deck — bay A2 | WF-FAB2-05 | FAB2 | structural | 2026-08-14T11:18:00-07:00 | 2026-08-15T08:24:00-07:00 | 7.1 | 0.71 | CAL-6x10 | 12 | 2026-08-14T11:18:00-07:00 | 2026-08-15T08:24:00-07:00 | 2026-08-18T09:36:00-07:00 | 2026-08-19T06:42:00-07:00 | 2.83 | 0.0 | True | IWP-FAB2-05 | concrete_cip_hot_weather | True | 303.0 | m3 |  |
| A-1044 | FAB2.FAB.05 | Slab finish & curing compound — FAB2 L2 deck — bay A2 | WF-FAB2-05 | FAB2 | structural | 2026-08-15T08:24:00-07:00 | 2026-08-17T08:00:00-07:00 | 9.6 | 0.96 | CAL-6x10 | 6 | 2026-08-15T08:24:00-07:00 | 2026-08-17T08:00:00-07:00 | 2026-08-19T06:42:00-07:00 | 2026-08-20T06:18:00-07:00 | 2.83 | 0.0 | True | IWP-FAB2-05 |  |  |  |  |  |
| A-1045 | FAB2.FAB.05 | Structural steel erection — FAB2 L2 deck — bay A2 | WF-FAB2-05 | FAB2 | structural | 2026-08-22T06:00:00-07:00 | 2026-08-26T11:12:00-07:00 | 35.2 | 3.52 | CAL-6x10 | 10 | 2026-08-22T06:00:00-07:00 | 2026-08-26T11:12:00-07:00 | 2026-08-25T14:18:00-07:00 | 2026-08-29T09:30:00-07:00 | 2.83 | 0.0 | True | IWP-FAB2-05 |  |  |  |  |  |
| A-1046 | FAB2.FAB.05 | Deck weld & shear stud installation — FAB2 L2 deck — bay A2 | WF-FAB2-05 | FAB2 | structural | 2026-08-26T11:12:00-07:00 | 2026-08-27T10:12:00-07:00 | 9.0 | 0.9 | CAL-6x10 | 4 | 2026-08-26T11:12:00-07:00 | 2026-08-27T10:12:00-07:00 | 2026-08-29T09:30:00-07:00 | 2026-08-31T08:30:00-07:00 | 2.83 | 0.0 | True | IWP-FAB2-05 | structural_welding_preheat | True | 202.2 | ea |  |
| A-1047 | FAB2.FAB.05 | Adhesive anchor installation — FAB2 L2 deck — bay A2 | WF-FAB2-05 | FAB2 | structural | 2026-08-27T10:12:00-07:00 | 2026-08-27T14:30:00-07:00 | 4.3 | 0.43 | CAL-6x10 | 3 | 2026-08-27T10:12:00-07:00 | 2026-08-27T14:30:00-07:00 | 2026-08-31T08:30:00-07:00 | 2026-08-31T12:48:00-07:00 | 2.83 | 0.0 | True | IWP-FAB2-05 | adhesive_anchor_epoxy | True | 363.9 | ea |  |
| A-1048 | FAB2.FAB.05 | Spray-applied fireproofing — FAB2 L2 deck — bay A2 | WF-FAB2-05 | FAB2 | structural | 2026-08-28T12:30:00-07:00 | 2026-08-29T12:24:00-07:00 | 9.9 | 0.99 | CAL-6x10 | 6 | 2026-08-28T12:30:00-07:00 | 2026-08-29T12:24:00-07:00 | 2026-09-01T10:48:00-07:00 | 2026-09-02T10:42:00-07:00 | 2.83 | 0.0 | True | IWP-FAB2-05 | sfrm_spray_applied_fireproofing | True | 3073.1 | m2 |  |
| A-1049 | FAB2.FAB.05 | Structural steel high-build coating — FAB2 L2 deck — bay A2 | WF-FAB2-05 | FAB2 | structural | 2026-09-02T06:24:00-07:00 | 2026-09-02T13:06:00-07:00 | 6.7 | 0.67 | CAL-6x10 | 5 | 2026-09-02T06:24:00-07:00 | 2026-09-02T13:06:00-07:00 | 2027-01-28T12:00:00-07:00 | 2027-01-29T08:42:00-07:00 | 121.56 | 0.0 |  | IWP-FAB2-05 | coating_epoxy_structural_steel | True | 4673.5 | m2 |  |
| A-1050 | FAB2.FAB.05 | MEP hanger & rough-in — FAB2 L2 deck — bay A2 | WF-FAB2-05 | FAB2 | mechanical | 2026-09-02T13:06:00-07:00 | 2026-09-05T13:48:00-07:00 | 30.7 | 3.07 | CAL-6x10 | 8 | 2026-09-02T13:06:00-07:00 | 2026-09-05T13:48:00-07:00 | 2027-01-29T08:42:00-07:00 | 2027-02-02T09:24:00-07:00 | 121.56 | 121.56 |  | IWP-FAB2-05 |  |  |  |  |  |
| A-1051 | FAB2.FAB.06 | Layout & survey control — FAB2 L2 deck — bay B2 | WF-FAB2-06 | FAB2 | civil | 2026-08-12T07:48:00-07:00 | 2026-08-13T09:24:00-07:00 | 11.6 | 1.16 | CAL-6x10 | 3 | 2026-08-12T07:48:00-07:00 | 2026-08-13T09:24:00-07:00 | 2026-08-13T09:48:00-07:00 | 2026-08-14T11:24:00-07:00 | 1.2 | 0.0 | True | IWP-FAB2-06 |  |  |  |  |  |
| A-1052 | FAB2.FAB.06 | Formwork & rebar placement — FAB2 L2 deck — bay B2 | WF-FAB2-06 | FAB2 | structural | 2026-08-13T09:24:00-07:00 | 2026-08-17T11:06:00-07:00 | 31.7 | 3.17 | CAL-6x10 | 9 | 2026-08-13T09:24:00-07:00 | 2026-08-17T11:06:00-07:00 | 2026-08-14T11:24:00-07:00 | 2026-08-18T13:06:00-07:00 | 1.2 | 0.0 | True | IWP-FAB2-06 |  |  |  |  |  |
| A-1053 | FAB2.FAB.06 | Slab pour — FAB2 L2 deck — bay B2 | WF-FAB2-06 | FAB2 | structural | 2026-08-17T11:06:00-07:00 | 2026-08-18T10:00:00-07:00 | 8.9 | 0.89 | CAL-6x10 | 12 | 2026-08-17T11:06:00-07:00 | 2026-08-18T10:00:00-07:00 | 2026-08-18T13:06:00-07:00 | 2026-08-19T12:00:00-07:00 | 1.2 | 0.0 | True | IWP-FAB2-06 | concrete_cip_hot_weather | True | 378.3 | m3 |  |
| A-1054 | FAB2.FAB.06 | Slab finish & curing compound — FAB2 L2 deck — bay B2 | WF-FAB2-06 | FAB2 | structural | 2026-08-18T10:00:00-07:00 | 2026-08-19T08:36:00-07:00 | 8.6 | 0.86 | CAL-6x10 | 6 | 2026-08-18T10:00:00-07:00 | 2026-08-19T08:36:00-07:00 | 2026-08-19T12:00:00-07:00 | 2026-08-20T10:36:00-07:00 | 1.2 | 0.0 | True | IWP-FAB2-06 |  |  |  |  |  |
| A-1055 | FAB2.FAB.06 | Structural steel erection — FAB2 L2 deck — bay B2 | WF-FAB2-06 | FAB2 | structural | 2026-08-25T06:36:00-07:00 | 2026-08-29T06:48:00-07:00 | 40.2 | 4.02 | CAL-6x10 | 10 | 2026-08-25T06:36:00-07:00 | 2026-08-29T06:48:00-07:00 | 2026-08-26T08:36:00-07:00 | 2026-08-31T08:48:00-07:00 | 1.2 | 0.0 | True | IWP-FAB2-06 |  |  |  |  |  |
| A-1056 | FAB2.FAB.06 | Deck weld & shear stud installation — FAB2 L2 deck — bay B2 | WF-FAB2-06 | FAB2 | structural | 2026-08-29T06:48:00-07:00 | 2026-08-29T15:36:00-07:00 | 8.8 | 0.88 | CAL-6x10 | 4 | 2026-08-29T06:48:00-07:00 | 2026-08-29T15:36:00-07:00 | 2026-08-31T08:48:00-07:00 | 2026-09-01T07:36:00-07:00 | 1.2 | 0.0 | True | IWP-FAB2-06 | structural_welding_preheat | True | 198.6 | ea |  |
| A-1057 | FAB2.FAB.06 | Adhesive anchor installation — FAB2 L2 deck — bay B2 | WF-FAB2-06 | FAB2 | structural | 2026-08-29T15:36:00-07:00 | 2026-08-31T10:48:00-07:00 | 5.2 | 0.52 | CAL-6x10 | 3 | 2026-08-29T15:36:00-07:00 | 2026-08-31T10:48:00-07:00 | 2026-09-01T07:36:00-07:00 | 2026-09-01T12:48:00-07:00 | 1.2 | 0.0 | True | IWP-FAB2-06 | adhesive_anchor_epoxy | True | 438.0 | ea |  |
| A-1058 | FAB2.FAB.06 | Spray-applied fireproofing — FAB2 L2 deck — bay B2 | WF-FAB2-06 | FAB2 | structural | 2026-09-01T08:48:00-07:00 | 2026-09-02T10:18:00-07:00 | 11.5 | 1.15 | CAL-6x10 | 6 | 2026-09-01T08:48:00-07:00 | 2026-09-02T10:18:00-07:00 | 2026-09-02T10:48:00-07:00 | 2026-09-03T12:18:00-07:00 | 1.2 | 0.0 | True | IWP-FAB2-06 | sfrm_spray_applied_fireproofing | True | 3550.8 | m2 |  |
| A-1059 | FAB2.FAB.06 | Structural steel high-build coating — FAB2 L2 deck — bay B2 | WF-FAB2-06 | FAB2 | structural | 2026-09-04T14:18:00-07:00 | 2026-09-05T11:18:00-07:00 | 7.0 | 0.7 | CAL-6x10 | 5 | 2026-09-04T14:18:00-07:00 | 2026-09-05T11:18:00-07:00 | 2027-01-28T07:54:00-07:00 | 2027-01-28T14:54:00-07:00 | 118.36 | 0.0 |  | IWP-FAB2-06 | coating_epoxy_structural_steel | True | 4878.4 | m2 |  |
| A-1060 | FAB2.FAB.06 | MEP hanger & rough-in — FAB2 L2 deck — bay B2 | WF-FAB2-06 | FAB2 | mechanical | 2026-09-05T11:18:00-07:00 | 2026-09-10T15:48:00-07:00 | 34.5 | 3.45 | CAL-6x10 | 8 | 2026-09-05T11:18:00-07:00 | 2026-09-10T15:48:00-07:00 | 2027-01-28T14:54:00-07:00 | 2027-02-02T09:24:00-07:00 | 118.36 | 118.36 |  | IWP-FAB2-06 |  |  |  |  |  |
| A-1061 | FAB2.FAB.07 | Layout & survey control — FAB2 L2 deck — bay C2 | WF-FAB2-07 | FAB2 | civil | 2026-08-12T11:00:00-07:00 | 2026-08-13T09:54:00-07:00 | 8.9 | 0.89 | CAL-6x10 | 3 | 2026-08-12T11:00:00-07:00 | 2026-08-13T09:54:00-07:00 | 2026-08-14T06:18:00-07:00 | 2026-08-14T15:12:00-07:00 | 1.53 | 0.0 | True | IWP-FAB2-07 |  |  |  |  |  |
| A-1062 | FAB2.FAB.07 | Formwork & rebar placement — FAB2 L2 deck — bay C2 | WF-FAB2-07 | FAB2 | structural | 2026-08-13T09:54:00-07:00 | 2026-08-17T15:24:00-07:00 | 35.5 | 3.55 | CAL-6x10 | 9 | 2026-08-13T09:54:00-07:00 | 2026-08-17T15:24:00-07:00 | 2026-08-14T15:12:00-07:00 | 2026-08-19T10:42:00-07:00 | 1.53 | 0.0 | True | IWP-FAB2-07 |  |  |  |  |  |
| A-1063 | FAB2.FAB.07 | Slab pour — FAB2 L2 deck — bay C2 | WF-FAB2-07 | FAB2 | structural | 2026-08-17T15:24:00-07:00 | 2026-08-18T13:36:00-07:00 | 8.2 | 0.82 | CAL-6x10 | 12 | 2026-08-17T15:24:00-07:00 | 2026-08-18T13:36:00-07:00 | 2026-08-19T10:42:00-07:00 | 2026-08-20T08:54:00-07:00 | 1.53 | 0.0 | True | IWP-FAB2-07 | concrete_cip_hot_weather | True | 347.0 | m3 |  |
| A-1064 | FAB2.FAB.07 | Slab finish & curing compound — FAB2 L2 deck — bay C2 | WF-FAB2-07 | FAB2 | structural | 2026-08-18T13:36:00-07:00 | 2026-08-19T12:12:00-07:00 | 8.6 | 0.86 | CAL-6x10 | 6 | 2026-08-18T13:36:00-07:00 | 2026-08-19T12:12:00-07:00 | 2026-08-20T08:54:00-07:00 | 2026-08-21T07:30:00-07:00 | 1.53 | 0.0 | True | IWP-FAB2-07 |  |  |  |  |  |
| A-1065 | FAB2.FAB.07 | Structural steel erection — FAB2 L2 deck — bay C2 | WF-FAB2-07 | FAB2 | structural | 2026-08-25T10:12:00-07:00 | 2026-08-29T13:06:00-07:00 | 42.9 | 4.29 | CAL-6x10 | 10 | 2026-08-25T10:12:00-07:00 | 2026-08-29T13:06:00-07:00 | 2026-08-26T15:30:00-07:00 | 2026-09-01T08:24:00-07:00 | 1.53 | 0.0 | True | IWP-FAB2-07 |  |  |  |  |  |
| A-1066 | FAB2.FAB.07 | Deck weld & shear stud installation — FAB2 L2 deck — bay C2 | WF-FAB2-07 | FAB2 | structural | 2026-08-29T13:06:00-07:00 | 2026-08-31T11:54:00-07:00 | 8.8 | 0.88 | CAL-6x10 | 4 | 2026-08-29T13:06:00-07:00 | 2026-08-31T11:54:00-07:00 | 2026-09-01T08:24:00-07:00 | 2026-09-02T07:12:00-07:00 | 1.53 | 0.0 | True | IWP-FAB2-07 | structural_welding_preheat | True | 196.9 | ea |  |
| A-1067 | FAB2.FAB.07 | Adhesive anchor installation — FAB2 L2 deck — bay C2 | WF-FAB2-07 | FAB2 | structural | 2026-08-31T11:54:00-07:00 | 2026-09-01T07:30:00-07:00 | 5.6 | 0.56 | CAL-6x10 | 3 | 2026-08-31T11:54:00-07:00 | 2026-09-01T07:30:00-07:00 | 2026-09-02T07:12:00-07:00 | 2026-09-02T12:48:00-07:00 | 1.53 | 0.33 | True | IWP-FAB2-07 | adhesive_anchor_epoxy | True | 471.7 | ea |  |
| A-1068 | FAB2.FAB.07 | Spray-applied fireproofing — FAB2 L2 deck — bay C2 | WF-FAB2-07 | FAB2 | structural | 2026-09-02T08:48:00-07:00 | 2026-09-03T09:30:00-07:00 | 10.7 | 1.07 | CAL-6x10 | 6 | 2026-09-02T08:48:00-07:00 | 2026-09-03T09:30:00-07:00 | 2026-09-03T10:48:00-07:00 | 2026-09-04T11:30:00-07:00 | 1.2 | 0.0 | True | IWP-FAB2-07 | sfrm_spray_applied_fireproofing | True | 3303.0 | m2 |  |
| A-1069 | FAB2.FAB.07 | Structural steel high-build coating — FAB2 L2 deck — bay C2 | WF-FAB2-07 | FAB2 | structural | 2026-09-05T13:30:00-07:00 | 2026-09-08T09:36:00-07:00 | 6.1 | 0.61 | CAL-6x10 | 5 | 2026-09-05T13:30:00-07:00 | 2026-09-08T09:36:00-07:00 | 2027-01-28T08:48:00-07:00 | 2027-01-28T14:54:00-07:00 | 117.53 | 0.0 |  | IWP-FAB2-07 | coating_epoxy_structural_steel | True | 4265.7 | m2 |  |
| A-1070 | FAB2.FAB.07 | MEP hanger & rough-in — FAB2 L2 deck — bay C2 | WF-FAB2-07 | FAB2 | mechanical | 2026-09-08T09:36:00-07:00 | 2026-09-11T14:06:00-07:00 | 34.5 | 3.45 | CAL-6x10 | 8 | 2026-09-08T09:36:00-07:00 | 2026-09-11T14:06:00-07:00 | 2027-01-28T14:54:00-07:00 | 2027-02-02T09:24:00-07:00 | 117.53 | 117.53 |  | IWP-FAB2-07 |  |  |  |  |  |

| id | wbs | name | work_face_id | structure_id | discipline | planned_start | planned_finish | duration_h | duration_d | calendar_id | crew_size | early_start | early_finish | late_start | late_finish | total_float_d | free_float_d | is_near_critical | iwp_id | trade_id | thermal_sensitive | quantity | quantity_unit | hold_point | milestone_date | milestone_name |
| --- | --- | --- | --- | --- | --- | --- | --- | --- | --- | --- | --- | --- | --- | --- | --- | --- | --- | --- | --- | --- | --- | --- | --- | --- | --- | --- |
| A-1071 | FAB2.FAB.08 | Layout & survey control — FAB2 L2 deck — bay D2 | WF-FAB2-08 | FAB2 | civil | 2026-08-13T13:54:00-07:00 | 2026-08-14T14:12:00-07:00 | 10.3 | 1.03 | CAL-6x10 | 3 | 2026-08-13T13:54:00-07:00 | 2026-08-14T14:12:00-07:00 | 2026-08-15T09:36:00-07:00 | 2026-08-17T09:54:00-07:00 | 1.57 | 0.0 | True | IWP-FAB2-08 |  |  |  |  |  |  |  |
| A-1072 | FAB2.FAB.08 | Formwork & rebar placement — FAB2 L2 deck — bay D2 | WF-FAB2-08 | FAB2 | structural | 2026-08-14T14:12:00-07:00 | 2026-08-18T15:48:00-07:00 | 31.6 | 3.16 | CAL-6x10 | 9 | 2026-08-14T14:12:00-07:00 | 2026-08-18T15:48:00-07:00 | 2026-08-17T09:54:00-07:00 | 2026-08-20T11:30:00-07:00 | 1.57 | 0.0 | True | IWP-FAB2-08 |  |  |  |  |  |  |  |
| A-1073 | FAB2.FAB.08 | Slab pour — FAB2 L2 deck — bay D2 | WF-FAB2-08 | FAB2 | structural | 2026-08-18T15:48:00-07:00 | 2026-08-19T14:30:00-07:00 | 8.7 | 0.87 | CAL-6x10 | 12 | 2026-08-18T15:48:00-07:00 | 2026-08-19T14:30:00-07:00 | 2026-08-20T11:30:00-07:00 | 2026-08-21T10:12:00-07:00 | 1.57 | 0.0 | True | IWP-FAB2-08 | concrete_cip_hot_weather | True | 371.3 | m3 |  |  |  |
| A-1074 | FAB2.FAB.08 | Slab finish & curing compound — FAB2 L2 deck — bay D2 | WF-FAB2-08 | FAB2 | structural | 2026-08-19T14:30:00-07:00 | 2026-08-20T13:06:00-07:00 | 8.6 | 0.86 | CAL-6x10 | 6 | 2026-08-19T14:30:00-07:00 | 2026-08-20T13:06:00-07:00 | 2026-08-21T10:12:00-07:00 | 2026-08-22T08:48:00-07:00 | 1.57 | 0.0 | True | IWP-FAB2-08 |  |  |  |  |  |  |  |
| A-1075 | FAB2.FAB.08 | Structural steel erection — FAB2 L2 deck — bay D2 | WF-FAB2-08 | FAB2 | structural | 2026-08-26T11:06:00-07:00 | 2026-08-31T12:54:00-07:00 | 41.8 | 4.18 | CAL-6x10 | 10 | 2026-08-26T11:06:00-07:00 | 2026-08-31T12:54:00-07:00 | 2026-08-28T06:48:00-07:00 | 2026-09-02T08:36:00-07:00 | 1.57 | 0.0 | True | IWP-FAB2-08 |  |  |  |  |  |  |  |
| A-1076 | FAB2.FAB.08 | Deck weld & shear stud installation — FAB2 L2 deck — bay D2 | WF-FAB2-08 | FAB2 | structural | 2026-08-31T12:54:00-07:00 | 2026-09-01T11:36:00-07:00 | 8.7 | 0.87 | CAL-6x10 | 4 | 2026-08-31T12:54:00-07:00 | 2026-09-01T11:36:00-07:00 | 2026-09-02T08:36:00-07:00 | 2026-09-03T07:18:00-07:00 | 1.57 | 0.0 | True | IWP-FAB2-08 | structural_welding_preheat | True | 195.5 | ea |  |  |  |
| A-1077 | FAB2.FAB.08 | Adhesive anchor installation — FAB2 L2 deck — bay D2 | WF-FAB2-08 | FAB2 | structural | 2026-09-01T11:36:00-07:00 | 2026-09-02T07:06:00-07:00 | 5.5 | 0.55 | CAL-6x10 | 3 | 2026-09-01T11:36:00-07:00 | 2026-09-02T07:06:00-07:00 | 2026-09-03T07:18:00-07:00 | 2026-09-03T12:48:00-07:00 | 1.57 | 0.37 | True | IWP-FAB2-08 | adhesive_anchor_epoxy | True | 459.1 | ea |  |  |  |
| A-1078 | FAB2.FAB.08 | Spray-applied fireproofing — FAB2 L2 deck — bay D2 | WF-FAB2-08 | FAB2 | structural | 2026-09-03T08:48:00-07:00 | 2026-09-04T08:30:00-07:00 | 9.7 | 0.97 | CAL-6x10 | 6 | 2026-09-03T08:48:00-07:00 | 2026-09-04T08:30:00-07:00 | 2026-09-04T10:48:00-07:00 | 2026-09-05T10:30:00-07:00 | 1.2 | 0.0 | True | IWP-FAB2-08 | sfrm_spray_applied_fireproofing | True | 3007.3 | m2 | Special inspector — SFRM thickness & density verification |  |  |
| A-1079 | FAB2.FAB.08 | Structural steel high-build coating — FAB2 L2 deck — bay D2 | WF-FAB2-08 | FAB2 | structural | 2026-09-08T12:30:00-07:00 | 2026-09-09T07:42:00-07:00 | 5.2 | 0.52 | CAL-6x10 | 5 | 2026-09-08T12:30:00-07:00 | 2026-09-09T07:42:00-07:00 | 2027-01-28T10:54:00-07:00 | 2027-01-29T06:06:00-07:00 | 116.84 | 0.0 |  | IWP-FAB2-08 | coating_epoxy_structural_steel | True | 3612.4 | m2 |  |  |  |
| A-1080 | FAB2.FAB.08 | MEP hanger & rough-in — FAB2 L2 deck — bay D2 | WF-FAB2-08 | FAB2 | mechanical | 2026-09-09T07:42:00-07:00 | 2026-09-12T11:00:00-07:00 | 33.3 | 3.33 | CAL-6x10 | 8 | 2026-09-09T07:42:00-07:00 | 2026-09-12T11:00:00-07:00 | 2027-01-29T06:06:00-07:00 | 2027-02-02T09:24:00-07:00 | 116.84 | 116.84 |  | IWP-FAB2-08 |  |  |  |  |  |  |  |
| A-1081 | FAB2.FAB.09 | Layout & survey control — FAB2 L3 deck — bay A3 | WF-FAB2-09 | FAB2 | civil | 2026-08-10T06:24:00-07:00 | 2026-08-11T07:30:00-07:00 | 11.1 | 1.11 | CAL-6x10 | 3 | 2026-08-10T06:24:00-07:00 | 2026-08-11T07:30:00-07:00 | 2026-08-17T12:24:00-07:00 | 2026-08-18T13:30:00-07:00 | 6.6 | 0.0 |  | IWP-FAB2-09 |  |  |  |  |  |  |  |
| A-1082 | FAB2.FAB.09 | Formwork & rebar placement — FAB2 L3 deck — bay A3 | WF-FAB2-09 | FAB2 | structural | 2026-08-11T07:30:00-07:00 | 2026-08-14T12:06:00-07:00 | 34.6 | 3.46 | CAL-6x10 | 9 | 2026-08-11T07:30:00-07:00 | 2026-08-14T12:06:00-07:00 | 2026-08-18T13:30:00-07:00 | 2026-08-22T08:06:00-07:00 | 6.6 | 0.0 |  | IWP-FAB2-09 |  |  |  |  |  |  |  |
| A-1083 | FAB2.FAB.09 | Slab pour — FAB2 L3 deck — bay A3 | WF-FAB2-09 | FAB2 | structural | 2026-08-14T12:06:00-07:00 | 2026-08-15T09:24:00-07:00 | 7.3 | 0.73 | CAL-6x10 | 12 | 2026-08-14T12:06:00-07:00 | 2026-08-15T09:24:00-07:00 | 2026-08-22T08:06:00-07:00 | 2026-08-22T15:24:00-07:00 | 6.6 | 0.0 |  | IWP-FAB2-09 | concrete_cip_hot_weather | True | 310.6 | m3 |  |  |  |
| A-1084 | FAB2.FAB.09 | Slab finish & curing compound — FAB2 L3 deck — bay A3 | WF-FAB2-09 | FAB2 | structural | 2026-08-15T09:24:00-07:00 | 2026-08-17T09:30:00-07:00 | 10.1 | 1.01 | CAL-6x10 | 6 | 2026-08-15T09:24:00-07:00 | 2026-08-17T09:30:00-07:00 | 2026-08-22T15:24:00-07:00 | 2026-08-24T15:30:00-07:00 | 6.6 | 0.0 |  | IWP-FAB2-09 |  |  |  |  |  |  |  |
| A-1085 | FAB2.FAB.09 | Structural steel erection — FAB2 L3 deck — bay A3 | WF-FAB2-09 | FAB2 | structural | 2026-08-22T07:30:00-07:00 | 2026-08-26T14:30:00-07:00 | 37.0 | 3.7 | CAL-6x10 | 10 | 2026-08-22T07:30:00-07:00 | 2026-08-26T14:30:00-07:00 | 2026-08-29T13:30:00-07:00 | 2026-09-03T10:30:00-07:00 | 6.6 | 0.0 |  | IWP-FAB2-09 |  |  |  |  |  |  |  |
| A-1086 | FAB2.FAB.09 | Deck weld & shear stud installation — FAB2 L3 deck — bay A3 | WF-FAB2-09 | FAB2 | structural | 2026-08-26T14:30:00-07:00 | 2026-08-27T12:24:00-07:00 | 7.9 | 0.79 | CAL-6x10 | 4 | 2026-08-26T14:30:00-07:00 | 2026-08-27T12:24:00-07:00 | 2026-09-03T10:30:00-07:00 | 2026-09-04T08:24:00-07:00 | 6.6 | 0.0 |  | IWP-FAB2-09 | structural_welding_preheat | True | 178.4 | ea |  |  |  |
| A-1087 | FAB2.FAB.09 | Adhesive anchor installation — FAB2 L3 deck — bay A3 | WF-FAB2-09 | FAB2 | structural | 2026-08-27T12:24:00-07:00 | 2026-08-28T06:48:00-07:00 | 4.4 | 0.44 | CAL-6x10 | 3 | 2026-08-27T12:24:00-07:00 | 2026-08-28T06:48:00-07:00 | 2026-09-04T08:24:00-07:00 | 2026-09-04T12:48:00-07:00 | 6.6 | 5.4 |  | IWP-FAB2-09 | adhesive_anchor_epoxy | True | 367.8 | ea |  |  |  |
| A-1088 | FAB2.FAB.09 | Spray-applied fireproofing — FAB2 L3 deck — bay A3 | WF-FAB2-09 | FAB2 | structural | 2026-09-04T08:48:00-07:00 | 2026-09-05T10:30:00-07:00 | 11.7 | 1.17 | CAL-6x10 | 6 | 2026-09-04T08:48:00-07:00 | 2026-09-05T10:30:00-07:00 | 2026-09-05T10:48:00-07:00 | 2026-09-08T12:30:00-07:00 | 1.2 | 0.0 | True | IWP-FAB2-09 | sfrm_spray_applied_fireproofing | True | 3620.0 | m2 |  |  |  |
| A-1089 | FAB2.FAB.09 | Structural steel high-build coating — FAB2 L3 deck — bay A3 | WF-FAB2-09 | FAB2 | structural | 2026-09-09T14:30:00-07:00 | 2026-09-10T11:24:00-07:00 | 6.9 | 0.69 | CAL-6x10 | 5 | 2026-09-09T14:30:00-07:00 | 2026-09-10T11:24:00-07:00 | 2027-01-28T10:42:00-07:00 | 2027-01-29T07:36:00-07:00 | 115.62 | 0.0 |  | IWP-FAB2-09 | coating_epoxy_structural_steel | True | 4814.3 | m2 |  |  |  |
| A-1090 | FAB2.FAB.09 | MEP hanger & rough-in — FAB2 L3 deck — bay A3 | WF-FAB2-09 | FAB2 | mechanical | 2026-09-10T11:24:00-07:00 | 2026-09-14T13:12:00-07:00 | 31.8 | 3.18 | CAL-6x10 | 8 | 2026-09-10T11:24:00-07:00 | 2026-09-14T13:12:00-07:00 | 2027-01-29T07:36:00-07:00 | 2027-02-02T09:24:00-07:00 | 115.62 | 115.62 |  | IWP-FAB2-09 |  |  |  |  |  |  |  |
| A-1091 | FAB2.FAB.10 | Layout & survey control — FAB2 L3 deck — bay B3 | WF-FAB2-10 | FAB2 | civil | 2026-08-12T07:48:00-07:00 | 2026-08-13T09:12:00-07:00 | 11.4 | 1.14 | CAL-6x10 | 3 | 2026-08-12T07:48:00-07:00 | 2026-08-13T09:12:00-07:00 | 2026-08-18T11:00:00-07:00 | 2026-08-19T12:24:00-07:00 | 5.32 | 0.0 |  | IWP-FAB2-10 |  |  |  |  |  |  |  |
| A-1092 | FAB2.FAB.10 | Formwork & rebar placement — FAB2 L3 deck — bay B3 | WF-FAB2-10 | FAB2 | structural | 2026-08-13T09:12:00-07:00 | 2026-08-15T15:06:00-07:00 | 25.9 | 2.59 | CAL-6x10 | 9 | 2026-08-13T09:12:00-07:00 | 2026-08-15T15:06:00-07:00 | 2026-08-19T12:24:00-07:00 | 2026-08-22T08:18:00-07:00 | 5.32 | 0.0 |  | IWP-FAB2-10 |  |  |  |  |  |  |  |
| A-1093 | FAB2.FAB.10 | Slab pour — FAB2 L3 deck — bay B3 | WF-FAB2-10 | FAB2 | structural | 2026-08-15T15:06:00-07:00 | 2026-08-17T12:24:00-07:00 | 7.3 | 0.73 | CAL-6x10 | 12 | 2026-08-15T15:06:00-07:00 | 2026-08-17T12:24:00-07:00 | 2026-08-22T08:18:00-07:00 | 2026-08-22T15:36:00-07:00 | 5.32 | 0.0 |  | IWP-FAB2-10 | concrete_cip_hot_weather | True | 311.0 | m3 |  |  |  |
| A-1094 | FAB2.FAB.10 | Slab finish & curing compound — FAB2 L3 deck — bay B3 | WF-FAB2-10 | FAB2 | structural | 2026-08-17T12:24:00-07:00 | 2026-08-18T11:12:00-07:00 | 8.8 | 0.88 | CAL-6x10 | 6 | 2026-08-17T12:24:00-07:00 | 2026-08-18T11:12:00-07:00 | 2026-08-22T15:36:00-07:00 | 2026-08-24T14:24:00-07:00 | 5.32 | 0.0 |  | IWP-FAB2-10 |  |  |  |  |  |  |  |
| A-1095 | FAB2.FAB.10 | Structural steel erection — FAB2 L3 deck — bay B3 | WF-FAB2-10 | FAB2 | structural | 2026-08-24T09:12:00-07:00 | 2026-08-28T15:36:00-07:00 | 46.4 | 4.64 | CAL-6x10 | 10 | 2026-08-24T09:12:00-07:00 | 2026-08-28T15:36:00-07:00 | 2026-08-29T12:24:00-07:00 | 2026-09-04T08:48:00-07:00 | 5.32 | 0.0 |  | IWP-FAB2-10 |  |  |  |  |  |  |  |
| A-1096 | FAB2.FAB.10 | Deck weld & shear stud installation — FAB2 L3 deck — bay B3 | WF-FAB2-10 | FAB2 | structural | 2026-08-28T15:36:00-07:00 | 2026-08-29T14:48:00-07:00 | 9.2 | 0.92 | CAL-6x10 | 4 | 2026-08-28T15:36:00-07:00 | 2026-08-29T14:48:00-07:00 | 2026-09-04T08:48:00-07:00 | 2026-09-05T08:00:00-07:00 | 5.32 | 0.0 |  | IWP-FAB2-10 | structural_welding_preheat | True | 206.0 | ea |  |  |  |
| A-1097 | FAB2.FAB.10 | Adhesive anchor installation — FAB2 L3 deck — bay B3 | WF-FAB2-10 | FAB2 | structural | 2026-08-29T14:48:00-07:00 | 2026-08-31T09:36:00-07:00 | 4.8 | 0.48 | CAL-6x10 | 3 | 2026-08-29T14:48:00-07:00 | 2026-08-31T09:36:00-07:00 | 2026-09-05T08:00:00-07:00 | 2026-09-05T12:48:00-07:00 | 5.32 | 4.12 |  | IWP-FAB2-10 | adhesive_anchor_epoxy | True | 406.5 | ea |  |  |  |
| A-1098 | FAB2.FAB.10 | Spray-applied fireproofing — FAB2 L3 deck — bay B3 | WF-FAB2-10 | FAB2 | structural | 2026-09-05T08:48:00-07:00 | 2026-09-08T10:42:00-07:00 | 11.9 | 1.19 | CAL-6x10 | 6 | 2026-09-05T08:48:00-07:00 | 2026-09-08T10:42:00-07:00 | 2026-09-08T10:48:00-07:00 | 2026-09-09T12:42:00-07:00 | 1.2 | 0.0 | True | IWP-FAB2-10 | sfrm_spray_applied_fireproofing | True | 3676.9 | m2 |  |  |  |
| A-1099 | FAB2.FAB.10 | Structural steel high-build coating — FAB2 L3 deck — bay B3 | WF-FAB2-10 | FAB2 | structural | 2026-09-10T14:42:00-07:00 | 2026-09-11T11:12:00-07:00 | 6.5 | 0.65 | CAL-6x10 | 5 | 2026-09-10T14:42:00-07:00 | 2026-09-11T11:12:00-07:00 | 2027-01-29T06:54:00-07:00 | 2027-01-29T13:24:00-07:00 | 115.22 | 0.0 |  | IWP-FAB2-10 | coating_epoxy_structural_steel | True | 4579.6 | m2 |  |  |  |
| A-1100 | FAB2.FAB.10 | MEP hanger & rough-in — FAB2 L3 deck — bay B3 | WF-FAB2-10 | FAB2 | mechanical | 2026-09-11T11:12:00-07:00 | 2026-09-15T07:12:00-07:00 | 26.0 | 2.6 | CAL-6x10 | 8 | 2026-09-11T11:12:00-07:00 | 2026-09-15T07:12:00-07:00 | 2027-01-29T13:24:00-07:00 | 2027-02-02T09:24:00-07:00 | 115.22 | 115.22 |  | IWP-FAB2-10 |  |  |  |  |  |  |  |
| A-1101 | FAB2.FAB.11 | Layout & survey control — FAB2 L3 deck — bay C3 | WF-FAB2-11 | FAB2 | civil | 2026-08-12T11:00:00-07:00 | 2026-08-13T12:48:00-07:00 | 11.8 | 1.18 | CAL-6x10 | 3 | 2026-08-12T11:00:00-07:00 | 2026-08-13T12:48:00-07:00 | 2026-08-19T10:54:00-07:00 | 2026-08-20T12:42:00-07:00 | 5.99 | 0.0 |  | IWP-FAB2-11 |  |  |  |  |  |  |  |
| A-1102 | FAB2.FAB.11 | Formwork & rebar placement — FAB2 L3 deck — bay C3 | WF-FAB2-11 | FAB2 | structural | 2026-08-13T12:48:00-07:00 | 2026-08-17T15:18:00-07:00 | 32.5 | 3.25 | CAL-6x10 | 9 | 2026-08-13T12:48:00-07:00 | 2026-08-17T15:18:00-07:00 | 2026-08-20T12:42:00-07:00 | 2026-08-24T15:12:00-07:00 | 5.99 | 0.0 |  | IWP-FAB2-11 |  |  |  |  |  |  |  |
| A-1103 | FAB2.FAB.11 | Slab pour — FAB2 L3 deck — bay C3 | WF-FAB2-11 | FAB2 | structural | 2026-08-17T15:18:00-07:00 | 2026-08-18T12:36:00-07:00 | 7.3 | 0.73 | CAL-6x10 | 12 | 2026-08-17T15:18:00-07:00 | 2026-08-18T12:36:00-07:00 | 2026-08-24T15:12:00-07:00 | 2026-08-25T12:30:00-07:00 | 5.99 | 0.0 |  | IWP-FAB2-11 | concrete_cip_hot_weather | True | 310.9 | m3 |  |  |  |
| A-1104 | FAB2.FAB.11 | Slab finish & curing compound — FAB2 L3 deck — bay C3 | WF-FAB2-11 | FAB2 | structural | 2026-08-18T12:36:00-07:00 | 2026-08-19T14:18:00-07:00 | 11.7 | 1.17 | CAL-6x10 | 6 | 2026-08-18T12:36:00-07:00 | 2026-08-19T14:18:00-07:00 | 2026-08-25T12:30:00-07:00 | 2026-08-26T14:12:00-07:00 | 5.99 | 0.0 |  | IWP-FAB2-11 |  |  |  |  |  |  |  |
| A-1105 | FAB2.FAB.11 | Structural steel erection — FAB2 L3 deck — bay C3 | WF-FAB2-11 | FAB2 | structural | 2026-08-25T12:18:00-07:00 | 2026-08-29T09:00:00-07:00 | 36.7 | 3.67 | CAL-6x10 | 10 | 2026-08-25T12:18:00-07:00 | 2026-08-29T09:00:00-07:00 | 2026-09-01T12:12:00-07:00 | 2026-09-05T08:54:00-07:00 | 5.99 | 0.0 |  | IWP-FAB2-11 |  |  |  |  |  |  |  |
| A-1106 | FAB2.FAB.11 | Deck weld & shear stud installation — FAB2 L3 deck — bay C3 | WF-FAB2-11 | FAB2 | structural | 2026-08-29T09:00:00-07:00 | 2026-08-31T07:36:00-07:00 | 8.6 | 0.86 | CAL-6x10 | 4 | 2026-08-29T09:00:00-07:00 | 2026-08-31T07:36:00-07:00 | 2026-09-05T08:54:00-07:00 | 2026-09-08T07:30:00-07:00 | 5.99 | 0.0 |  | IWP-FAB2-11 | structural_welding_preheat | True | 193.7 | ea |  |  |  |
| A-1107 | FAB2.FAB.11 | Adhesive anchor installation — FAB2 L3 deck — bay C3 | WF-FAB2-11 | FAB2 | structural | 2026-08-31T07:36:00-07:00 | 2026-08-31T12:54:00-07:00 | 5.3 | 0.53 | CAL-6x10 | 3 | 2026-08-31T07:36:00-07:00 | 2026-08-31T12:54:00-07:00 | 2026-09-08T07:30:00-07:00 | 2026-09-08T12:48:00-07:00 | 5.99 | 4.79 |  | IWP-FAB2-11 | adhesive_anchor_epoxy | True | 446.2 | ea |  |  |  |
| A-1108 | FAB2.FAB.11 | Spray-applied fireproofing — FAB2 L3 deck — bay C3 | WF-FAB2-11 | FAB2 | structural | 2026-09-08T08:48:00-07:00 | 2026-09-09T10:24:00-07:00 | 11.6 | 1.16 | CAL-6x10 | 6 | 2026-09-08T08:48:00-07:00 | 2026-09-09T10:24:00-07:00 | 2026-09-09T10:48:00-07:00 | 2026-09-10T12:24:00-07:00 | 1.2 | 0.0 | True | IWP-FAB2-11 | sfrm_spray_applied_fireproofing | True | 3591.1 | m2 |  |  |  |
| A-1109 | FAB2.FAB.11 | Structural steel high-build coating — FAB2 L3 deck — bay C3 | WF-FAB2-11 | FAB2 | structural | 2026-09-11T14:24:00-07:00 | 2026-09-12T11:06:00-07:00 | 6.7 | 0.67 | CAL-6x10 | 5 | 2026-09-11T14:24:00-07:00 | 2026-09-12T11:06:00-07:00 | 2027-01-28T14:48:00-07:00 | 2027-01-29T11:30:00-07:00 | 114.04 | 0.0 |  | IWP-FAB2-11 | coating_epoxy_structural_steel | True | 4694.2 | m2 |  |  |  |
| A-1110 | FAB2.FAB.11 | MEP hanger & rough-in — FAB2 L3 deck — bay C3 | WF-FAB2-11 | FAB2 | mechanical | 2026-09-12T11:06:00-07:00 | 2026-09-16T09:00:00-07:00 | 27.9 | 2.79 | CAL-6x10 | 8 | 2026-09-12T11:06:00-07:00 | 2026-09-16T09:00:00-07:00 | 2027-01-29T11:30:00-07:00 | 2027-02-02T09:24:00-07:00 | 114.04 | 114.04 |  | IWP-FAB2-11 |  |  |  |  |  |  |  |
| A-1111 | FAB2.FAB.12 | Layout & survey control — FAB2 L3 deck — bay D3 | WF-FAB2-12 | FAB2 | civil | 2026-08-13T13:54:00-07:00 | 2026-08-14T14:18:00-07:00 | 10.4 | 1.04 | CAL-6x10 | 3 | 2026-08-13T13:54:00-07:00 | 2026-08-14T14:18:00-07:00 | 2026-08-20T15:48:00-07:00 | 2026-08-22T06:12:00-07:00 | 6.19 | 0.0 |  | IWP-FAB2-12 |  |  |  |  |  |  |  |
| A-1112 | FAB2.FAB.12 | Formwork & rebar placement — FAB2 L3 deck — bay D3 | WF-FAB2-12 | FAB2 | structural | 2026-08-14T14:18:00-07:00 | 2026-08-18T12:00:00-07:00 | 27.7 | 2.77 | CAL-6x10 | 9 | 2026-08-14T14:18:00-07:00 | 2026-08-18T12:00:00-07:00 | 2026-08-22T06:12:00-07:00 | 2026-08-25T13:54:00-07:00 | 6.19 | 0.0 |  | IWP-FAB2-12 |  |  |  |  |  |  |  |
| A-1113 | FAB2.FAB.12 | Slab pour — FAB2 L3 deck — bay D3 | WF-FAB2-12 | FAB2 | structural | 2026-08-18T12:00:00-07:00 | 2026-08-19T10:54:00-07:00 | 8.9 | 0.89 | CAL-6x10 | 12 | 2026-08-18T12:00:00-07:00 | 2026-08-19T10:54:00-07:00 | 2026-08-25T13:54:00-07:00 | 2026-08-26T12:48:00-07:00 | 6.19 | 0.0 |  | IWP-FAB2-12 | concrete_cip_hot_weather | True | 377.3 | m3 |  |  |  |
| A-1114 | FAB2.FAB.12 | Slab finish & curing compound — FAB2 L3 deck — bay D3 | WF-FAB2-12 | FAB2 | structural | 2026-08-19T10:54:00-07:00 | 2026-08-20T11:54:00-07:00 | 11.0 | 1.1 | CAL-6x10 | 6 | 2026-08-19T10:54:00-07:00 | 2026-08-20T11:54:00-07:00 | 2026-08-26T12:48:00-07:00 | 2026-08-27T13:48:00-07:00 | 6.19 | 0.0 |  | IWP-FAB2-12 |  |  |  |  |  |  |  |
| A-1115 | FAB2.FAB.12 | Structural steel erection — FAB2 L3 deck — bay D3 | WF-FAB2-12 | FAB2 | structural | 2026-08-26T09:54:00-07:00 | 2026-08-31T07:12:00-07:00 | 37.3 | 3.73 | CAL-6x10 | 10 | 2026-08-26T09:54:00-07:00 | 2026-08-31T07:12:00-07:00 | 2026-09-02T11:48:00-07:00 | 2026-09-08T09:06:00-07:00 | 6.19 | 0.0 |  | IWP-FAB2-12 |  |  |  |  |  |  |  |
| A-1116 | FAB2.FAB.12 | Deck weld & shear stud installation — FAB2 L3 deck — bay D3 | WF-FAB2-12 | FAB2 | structural | 2026-08-31T07:12:00-07:00 | 2026-08-31T14:54:00-07:00 | 7.7 | 0.77 | CAL-6x10 | 4 | 2026-08-31T07:12:00-07:00 | 2026-08-31T14:54:00-07:00 | 2026-09-08T09:06:00-07:00 | 2026-09-09T06:48:00-07:00 | 6.19 | 0.0 |  | IWP-FAB2-12 | structural_welding_preheat | True | 173.5 | ea |  |  |  |
| A-1117 | FAB2.FAB.12 | Adhesive anchor installation — FAB2 L3 deck — bay D3 | WF-FAB2-12 | FAB2 | structural | 2026-08-31T14:54:00-07:00 | 2026-09-01T10:54:00-07:00 | 6.0 | 0.6 | CAL-6x10 | 3 | 2026-08-31T14:54:00-07:00 | 2026-09-01T10:54:00-07:00 | 2026-09-09T06:48:00-07:00 | 2026-09-09T12:48:00-07:00 | 6.19 | 4.99 |  | IWP-FAB2-12 | adhesive_anchor_epoxy | True | 501.0 | ea |  |  |  |
| A-1118 | FAB2.FAB.12 | Spray-applied fireproofing — FAB2 L3 deck — bay D3 | WF-FAB2-12 | FAB2 | structural | 2026-09-09T08:48:00-07:00 | 2026-09-10T09:54:00-07:00 | 11.1 | 1.11 | CAL-6x10 | 6 | 2026-09-09T08:48:00-07:00 | 2026-09-10T09:54:00-07:00 | 2026-09-10T10:48:00-07:00 | 2026-09-11T11:54:00-07:00 | 1.2 | 0.0 | True | IWP-FAB2-12 | sfrm_spray_applied_fireproofing | True | 3432.7 | m2 |  |  |  |
| A-1119 | FAB2.FAB.12 | Structural steel high-build coating — FAB2 L3 deck — bay D3 | WF-FAB2-12 | FAB2 | structural | 2026-09-12T13:54:00-07:00 | 2026-09-14T10:36:00-07:00 | 6.7 | 0.67 | CAL-6x10 | 5 | 2026-09-12T13:54:00-07:00 | 2026-09-14T10:36:00-07:00 | 2027-01-28T09:24:00-07:00 | 2027-01-29T06:06:00-07:00 | 112.55 | 0.0 |  | IWP-FAB2-12 | coating_epoxy_structural_steel | True | 4701.9 | m2 |  |  |  |
| A-1120 | FAB2.FAB.12 | MEP hanger & rough-in — FAB2 L3 deck — bay D3 | WF-FAB2-12 | FAB2 | mechanical | 2026-09-14T10:36:00-07:00 | 2026-09-17T13:54:00-07:00 | 33.3 | 3.33 | CAL-6x10 | 8 | 2026-09-14T10:36:00-07:00 | 2026-09-17T13:54:00-07:00 | 2027-01-29T06:06:00-07:00 | 2027-02-02T09:24:00-07:00 | 112.55 | 112.55 |  | IWP-FAB2-12 |  |  |  |  |  |  |  |
| A-1121 | FAB2.FAB.13 | Layout & survey control — FAB2 Perimeter facade — bay A4 | WF-FAB2-13 | FAB2 | civil | 2026-08-10T06:24:00-07:00 | 2026-08-10T15:00:00-07:00 | 8.6 | 0.86 | CAL-6x10 | 3 | 2026-08-10T06:24:00-07:00 | 2026-08-10T15:00:00-07:00 | 2026-08-20T12:12:00-07:00 | 2026-08-21T10:48:00-07:00 | 9.58 | 0.0 |  | IWP-FAB2-13 |  |  |  |  |  |  |  |
| A-1122 | FAB2.FAB.13 | Formwork & rebar placement — FAB2 Perimeter facade — bay A4 | WF-FAB2-13 | FAB2 | structural | 2026-08-10T15:00:00-07:00 | 2026-08-14T09:12:00-07:00 | 34.2 | 3.42 | CAL-6x10 | 9 | 2026-08-10T15:00:00-07:00 | 2026-08-14T09:12:00-07:00 | 2026-08-21T10:48:00-07:00 | 2026-08-25T15:00:00-07:00 | 9.58 | 0.0 |  | IWP-FAB2-13 |  |  |  |  |  |  |  |
| A-1123 | FAB2.FAB.13 | Slab pour — FAB2 Perimeter facade — bay A4 | WF-FAB2-13 | FAB2 | structural | 2026-08-14T09:12:00-07:00 | 2026-08-15T08:42:00-07:00 | 9.5 | 0.95 | CAL-6x10 | 12 | 2026-08-14T09:12:00-07:00 | 2026-08-15T08:42:00-07:00 | 2026-08-25T15:00:00-07:00 | 2026-08-26T14:30:00-07:00 | 9.58 | 0.0 |  | IWP-FAB2-13 | concrete_cip_hot_weather | True | 402.6 | m3 |  |  |  |
| A-1124 | FAB2.FAB.13 | Slab finish & curing compound — FAB2 Perimeter facade — bay A4 | WF-FAB2-13 | FAB2 | structural | 2026-08-15T08:42:00-07:00 | 2026-08-17T08:18:00-07:00 | 9.6 | 0.96 | CAL-6x10 | 6 | 2026-08-15T08:42:00-07:00 | 2026-08-17T08:18:00-07:00 | 2026-08-26T14:30:00-07:00 | 2026-08-27T14:06:00-07:00 | 9.58 | 0.0 |  | IWP-FAB2-13 |  |  |  |  |  |  |  |
| A-1125 | FAB2.FAB.13 | Structural steel erection — FAB2 Perimeter facade — bay A4 | WF-FAB2-13 | FAB2 | structural | 2026-08-22T06:18:00-07:00 | 2026-08-27T13:24:00-07:00 | 47.1 | 4.71 | CAL-6x10 | 10 | 2026-08-22T06:18:00-07:00 | 2026-08-27T13:24:00-07:00 | 2026-09-02T12:06:00-07:00 | 2026-09-09T09:12:00-07:00 | 9.58 | 0.0 |  | IWP-FAB2-13 |  |  |  |  |  |  |  |
| A-1126 | FAB2.FAB.13 | Deck weld & shear stud installation — FAB2 Perimeter facade — bay A4 | WF-FAB2-13 | FAB2 | structural | 2026-08-27T13:24:00-07:00 | 2026-08-28T11:12:00-07:00 | 7.8 | 0.78 | CAL-6x10 | 4 | 2026-08-27T13:24:00-07:00 | 2026-08-28T11:12:00-07:00 | 2026-09-09T09:12:00-07:00 | 2026-09-10T07:00:00-07:00 | 9.58 | 0.0 |  | IWP-FAB2-13 | structural_welding_preheat | True | 176.4 | ea |  |  |  |
| A-1127 | FAB2.FAB.13 | Adhesive anchor installation — FAB2 Perimeter facade — bay A4 | WF-FAB2-13 | FAB2 | structural | 2026-08-28T11:12:00-07:00 | 2026-08-29T07:00:00-07:00 | 5.8 | 0.58 | CAL-6x10 | 3 | 2026-08-28T11:12:00-07:00 | 2026-08-29T07:00:00-07:00 | 2026-09-10T07:00:00-07:00 | 2026-09-10T12:48:00-07:00 | 9.58 | 8.38 |  | IWP-FAB2-13 | adhesive_anchor_epoxy | True | 487.0 | ea |  |  |  |
| A-1128 | FAB2.FAB.13 | Spray-applied fireproofing — FAB2 Perimeter facade — bay A4 | WF-FAB2-13 | FAB2 | structural | 2026-09-10T08:48:00-07:00 | 2026-09-11T08:18:00-07:00 | 9.5 | 0.95 | CAL-6x10 | 6 | 2026-09-10T08:48:00-07:00 | 2026-09-11T08:18:00-07:00 | 2026-09-11T10:48:00-07:00 | 2026-09-12T10:18:00-07:00 | 1.2 | 0.0 | True | IWP-FAB2-13 | sfrm_spray_applied_fireproofing | True | 2948.0 | m2 |  |  |  |
| A-1129 | FAB2.FAB.13 | Structural steel high-build coating — FAB2 Perimeter facade — bay A4 | WF-FAB2-13 | FAB2 | structural | 2026-09-14T12:18:00-07:00 | 2026-09-15T08:48:00-07:00 | 6.5 | 0.65 | CAL-6x10 | 5 | 2026-09-14T12:18:00-07:00 | 2026-09-15T08:48:00-07:00 | 2027-01-28T14:24:00-07:00 | 2027-01-29T10:54:00-07:00 | 112.21 | 0.0 |  | IWP-FAB2-13 | coating_epoxy_structural_steel | True | 4569.2 | m2 |  |  |  |
| A-1130 | FAB2.FAB.13 | MEP hanger & rough-in — FAB2 Perimeter facade — bay A4 | WF-FAB2-13 | FAB2 | mechanical | 2026-09-15T08:48:00-07:00 | 2026-09-18T07:18:00-07:00 | 28.5 | 2.85 | CAL-6x10 | 8 | 2026-09-15T08:48:00-07:00 | 2026-09-18T07:18:00-07:00 | 2027-01-29T10:54:00-07:00 | 2027-02-02T09:24:00-07:00 | 112.21 | 112.21 |  | IWP-FAB2-13 |  |  |  |  |  |  |  |
| A-1131 | FAB2.FAB.14 | Layout & survey control — FAB2 Perimeter facade — bay B4 | WF-FAB2-14 | FAB2 | civil | 2026-08-12T07:48:00-07:00 | 2026-08-13T06:36:00-07:00 | 8.8 | 0.88 | CAL-6x10 | 3 | 2026-08-12T07:48:00-07:00 | 2026-08-13T06:36:00-07:00 | 2026-08-22T15:24:00-07:00 | 2026-08-24T14:12:00-07:00 | 9.76 | 0.0 |  | IWP-FAB2-14 |  |  |  |  |  |  |  |
| A-1132 | FAB2.FAB.14 | Formwork & rebar placement — FAB2 Perimeter facade — bay B4 | WF-FAB2-14 | FAB2 | structural | 2026-08-13T06:36:00-07:00 | 2026-08-17T09:18:00-07:00 | 32.7 | 3.27 | CAL-6x10 | 9 | 2026-08-13T06:36:00-07:00 | 2026-08-17T09:18:00-07:00 | 2026-08-24T14:12:00-07:00 | 2026-08-28T06:54:00-07:00 | 9.76 | 0.0 |  | IWP-FAB2-14 |  |  |  |  |  |  |  |
| A-1133 | FAB2.FAB.14 | Slab pour — FAB2 Perimeter facade — bay B4 | WF-FAB2-14 | FAB2 | structural | 2026-08-17T09:18:00-07:00 | 2026-08-18T08:30:00-07:00 | 9.2 | 0.92 | CAL-6x10 | 12 | 2026-08-17T09:18:00-07:00 | 2026-08-18T08:30:00-07:00 | 2026-08-28T06:54:00-07:00 | 2026-08-29T06:06:00-07:00 | 9.76 | 0.0 |  | IWP-FAB2-14 | concrete_cip_hot_weather | True | 392.9 | m3 |  |  |  |
| A-1134 | FAB2.FAB.14 | Slab finish & curing compound — FAB2 Perimeter facade — bay B4 | WF-FAB2-14 | FAB2 | structural | 2026-08-18T08:30:00-07:00 | 2026-08-19T09:00:00-07:00 | 10.5 | 1.05 | CAL-6x10 | 6 | 2026-08-18T08:30:00-07:00 | 2026-08-19T09:00:00-07:00 | 2026-08-29T06:06:00-07:00 | 2026-08-31T06:36:00-07:00 | 9.76 | 0.0 |  | IWP-FAB2-14 |  |  |  |  |  |  |  |
| A-1135 | FAB2.FAB.14 | Structural steel erection — FAB2 Perimeter facade — bay B4 | WF-FAB2-14 | FAB2 | structural | 2026-08-25T07:00:00-07:00 | 2026-08-28T11:18:00-07:00 | 34.3 | 3.43 | CAL-6x10 | 10 | 2026-08-25T07:00:00-07:00 | 2026-08-28T11:18:00-07:00 | 2026-09-04T14:36:00-07:00 | 2026-09-10T08:54:00-07:00 | 9.76 | 0.0 |  | IWP-FAB2-14 |  |  |  |  |  |  |  |
| A-1136 | FAB2.FAB.14 | Deck weld & shear stud installation — FAB2 Perimeter facade — bay B4 | WF-FAB2-14 | FAB2 | structural | 2026-08-28T11:18:00-07:00 | 2026-08-29T09:30:00-07:00 | 8.2 | 0.82 | CAL-6x10 | 4 | 2026-08-28T11:18:00-07:00 | 2026-08-29T09:30:00-07:00 | 2026-09-10T08:54:00-07:00 | 2026-09-11T07:06:00-07:00 | 9.76 | 0.0 |  | IWP-FAB2-14 | structural_welding_preheat | True | 184.3 | ea |  |  |  |
| A-1137 | FAB2.FAB.14 | Adhesive anchor installation — FAB2 Perimeter facade — bay B4 | WF-FAB2-14 | FAB2 | structural | 2026-08-29T09:30:00-07:00 | 2026-08-29T15:12:00-07:00 | 5.7 | 0.57 | CAL-6x10 | 3 | 2026-08-29T09:30:00-07:00 | 2026-08-29T15:12:00-07:00 | 2026-09-11T07:06:00-07:00 | 2026-09-11T12:48:00-07:00 | 9.76 | 8.56 |  | IWP-FAB2-14 | adhesive_anchor_epoxy | True | 480.9 | ea |  |  |  |
| A-1138 | FAB2.FAB.14 | Spray-applied fireproofing — FAB2 Perimeter facade — bay B4 | WF-FAB2-14 | FAB2 | structural | 2026-09-11T08:48:00-07:00 | 2026-09-12T08:24:00-07:00 | 9.6 | 0.96 | CAL-6x10 | 6 | 2026-09-11T08:48:00-07:00 | 2026-09-12T08:24:00-07:00 | 2026-09-12T10:48:00-07:00 | 2026-09-14T10:24:00-07:00 | 1.2 | 0.0 | True | IWP-FAB2-14 | sfrm_spray_applied_fireproofing | True | 2964.4 | m2 |  |  |  |
| A-1139 | FAB2.FAB.14 | Structural steel high-build coating — FAB2 Perimeter facade — bay B4 | WF-FAB2-14 | FAB2 | structural | 2026-09-15T12:24:00-07:00 | 2026-09-16T08:18:00-07:00 | 5.9 | 0.59 | CAL-6x10 | 5 | 2026-09-15T12:24:00-07:00 | 2026-09-16T08:18:00-07:00 | 2026-09-16T14:24:00-07:00 | 2026-09-17T10:18:00-07:00 | 1.2 | 0.0 | True | IWP-FAB2-14 | coating_epoxy_structural_steel | True | 4097.5 | m2 |  |  |  |
| A-1140 | FAB2.FAB.14 | MEP hanger & rough-in — FAB2 Perimeter facade — bay B4 | WF-FAB2-14 | FAB2 | mechanical | 2026-09-16T08:18:00-07:00 | 2026-09-19T06:12:00-07:00 | 27.9 | 2.79 | CAL-6x10 | 8 | 2026-09-16T08:18:00-07:00 | 2026-09-19T06:12:00-07:00 | 2026-09-17T10:18:00-07:00 | 2026-09-21T08:12:00-07:00 | 1.2 | 1.2 | True | IWP-FAB2-14 |  |  |  |  |  | 2026-09-21T08:12:00-07:00 | MS-210 Clean room shell dry-in |

| id | wbs | name | work_face_id | structure_id | discipline | planned_start | planned_finish | duration_h | duration_d | calendar_id | crew_size | early_start | early_finish | late_start | late_finish | total_float_d | free_float_d | iwp_id | trade_id | thermal_sensitive | quantity | quantity_unit | hold_point |
| --- | --- | --- | --- | --- | --- | --- | --- | --- | --- | --- | --- | --- | --- | --- | --- | --- | --- | --- | --- | --- | --- | --- | --- |
| A-1141 | CUB.YARD.01 | Excavation & subgrade prep — CUB grade — bay A1 | WF-CUB-01 | CUB | sitework | 2026-08-14T14:00:00-07:00 | 2026-08-18T06:54:00-07:00 | 22.9 | 2.29 | CAL-6x10 | 5 | 2026-08-14T14:00:00-07:00 | 2026-08-18T06:54:00-07:00 | 2026-12-26T13:42:00-07:00 | 2026-12-30T06:36:00-07:00 | 109.97 | 0.0 | IWP-CUB-01 |  |  |  |  |  |
| A-1142 | CUB.YARD.01 | Equipment pad pour — CUB grade — bay A1 | WF-CUB-01 | CUB | structural | 2026-08-18T06:54:00-07:00 | 2026-08-18T15:30:00-07:00 | 8.6 | 0.86 | CAL-6x10 | 10 | 2026-08-18T06:54:00-07:00 | 2026-08-18T15:30:00-07:00 | 2026-12-30T06:36:00-07:00 | 2026-12-30T15:12:00-07:00 | 109.97 | 0.0 | IWP-CUB-01 | concrete_cip_hot_weather | True | 129.6 | m3 |  |
| A-1143 | CUB.YARD.01 | Anchor bolt & adhesive anchor set — CUB grade — bay A1 | WF-CUB-01 | CUB | structural | 2026-08-21T09:30:00-07:00 | 2026-08-21T14:36:00-07:00 | 5.1 | 0.51 | CAL-6x10 | 3 | 2026-08-21T09:30:00-07:00 | 2026-08-21T14:36:00-07:00 | 2027-01-04T09:12:00-07:00 | 2027-01-04T14:18:00-07:00 | 109.97 | 0.0 | IWP-CUB-01 | adhesive_anchor_epoxy | True | 163.9 | ea |  |
| A-1144 | CUB.YARD.01 | Equipment set & alignment — CUB grade — bay A1 | WF-CUB-01 | CUB | mechanical | 2026-08-21T14:36:00-07:00 | 2026-08-25T15:48:00-07:00 | 31.2 | 3.12 | CAL-6x10 | 6 | 2026-08-21T14:36:00-07:00 | 2026-08-25T15:48:00-07:00 | 2027-01-04T14:18:00-07:00 | 2027-01-07T15:30:00-07:00 | 109.97 | 0.0 | IWP-CUB-01 |  |  |  |  |  |
| A-1145 | CUB.YARD.01 | Pipe rack erection — CUB grade — bay A1 | WF-CUB-01 | CUB | mechanical | 2026-08-25T15:48:00-07:00 | 2026-08-27T14:18:00-07:00 | 18.5 | 1.85 | CAL-6x10 | 6 | 2026-08-25T15:48:00-07:00 | 2026-08-27T14:18:00-07:00 | 2027-01-07T15:30:00-07:00 | 2027-01-09T14:00:00-07:00 | 109.97 | 0.0 | IWP-CUB-01 |  |  |  |  |  |
| A-1146 | CUB.YARD.01 | Pipe rack & equipment coating — CUB grade — bay A1 | WF-CUB-01 | CUB | mechanical | 2026-08-27T14:18:00-07:00 | 2026-08-28T09:48:00-07:00 | 5.5 | 0.55 | CAL-6x10 | 4 | 2026-08-27T14:18:00-07:00 | 2026-08-28T09:48:00-07:00 | 2027-01-09T14:00:00-07:00 | 2027-01-11T09:30:00-07:00 | 109.97 | 0.0 | IWP-CUB-01 | coating_epoxy_structural_steel | True | 1281.7 | m2 |  |
| A-1147 | CUB.YARD.01 | Conduit, grounding & terminations — CUB grade — bay A1 | WF-CUB-01 | CUB | electrical | 2026-08-29T10:18:00-07:00 | 2026-09-02T13:18:00-07:00 | 33.0 | 3.3 | CAL-6x10 | 6 | 2026-08-29T10:18:00-07:00 | 2026-09-02T13:18:00-07:00 | 2027-01-12T10:00:00-07:00 | 2027-01-15T13:00:00-07:00 | 109.97 | 109.97 | IWP-CUB-01 |  |  |  |  |  |
| A-1148 | CUB.YARD.02 | Excavation & subgrade prep — CUB grade — bay B1 | WF-CUB-02 | CUB | sitework | 2026-08-15T06:00:00-07:00 | 2026-08-18T09:48:00-07:00 | 23.8 | 2.38 | CAL-6x10 | 5 | 2026-08-15T06:00:00-07:00 | 2026-08-18T09:48:00-07:00 | 2027-01-14T15:54:00-07:00 | 2027-01-18T09:42:00-07:00 | 124.99 | 0.0 | IWP-CUB-02 |  |  |  |  |  |
| A-1149 | CUB.YARD.02 | Equipment pad pour — CUB grade — bay B1 | WF-CUB-02 | CUB | structural | 2026-08-18T09:48:00-07:00 | 2026-08-19T07:18:00-07:00 | 7.5 | 0.75 | CAL-6x10 | 10 | 2026-08-18T09:48:00-07:00 | 2026-08-19T07:18:00-07:00 | 2027-01-18T09:42:00-07:00 | 2027-01-19T07:12:00-07:00 | 124.99 | 0.0 | IWP-CUB-02 | concrete_cip_hot_weather | True | 112.7 | m3 |  |
| A-1150 | CUB.YARD.02 | Anchor bolt & adhesive anchor set — CUB grade — bay B1 | WF-CUB-02 | CUB | structural | 2026-08-21T11:18:00-07:00 | 2026-08-21T15:36:00-07:00 | 4.3 | 0.43 | CAL-6x10 | 3 | 2026-08-21T11:18:00-07:00 | 2026-08-21T15:36:00-07:00 | 2027-01-21T11:12:00-07:00 | 2027-01-21T15:30:00-07:00 | 124.99 | 0.0 | IWP-CUB-02 | adhesive_anchor_epoxy | True | 137.0 | ea |  |
| A-1151 | CUB.YARD.02 | Equipment set & alignment — CUB grade — bay B1 | WF-CUB-02 | CUB | mechanical | 2026-08-21T15:36:00-07:00 | 2026-08-25T13:12:00-07:00 | 27.6 | 2.76 | CAL-6x10 | 6 | 2026-08-21T15:36:00-07:00 | 2026-08-25T13:12:00-07:00 | 2027-01-21T15:30:00-07:00 | 2027-01-25T13:06:00-07:00 | 124.99 | 0.0 | IWP-CUB-02 |  |  |  |  |  |
| A-1152 | CUB.YARD.02 | Pipe rack erection — CUB grade — bay B1 | WF-CUB-02 | CUB | mechanical | 2026-08-25T13:12:00-07:00 | 2026-08-28T06:12:00-07:00 | 23.0 | 2.3 | CAL-6x10 | 6 | 2026-08-25T13:12:00-07:00 | 2026-08-28T06:12:00-07:00 | 2027-01-25T13:06:00-07:00 | 2027-01-28T06:06:00-07:00 | 124.99 | 0.0 | IWP-CUB-02 |  |  |  |  |  |
| A-1153 | CUB.YARD.02 | Pipe rack & equipment coating — CUB grade — bay B1 | WF-CUB-02 | CUB | mechanical | 2026-08-28T06:12:00-07:00 | 2026-08-28T13:24:00-07:00 | 7.2 | 0.72 | CAL-6x10 | 4 | 2026-08-28T06:12:00-07:00 | 2026-08-28T13:24:00-07:00 | 2027-01-28T06:06:00-07:00 | 2027-01-28T13:18:00-07:00 | 124.99 | 0.0 | IWP-CUB-02 | coating_epoxy_structural_steel | True | 1673.2 | m2 |  |
| A-1154 | CUB.YARD.02 | Conduit, grounding & terminations — CUB grade — bay B1 | WF-CUB-02 | CUB | electrical | 2026-08-29T12:12:00-07:00 | 2026-09-02T09:30:00-07:00 | 27.3 | 2.73 | CAL-6x10 | 6 | 2026-08-29T12:12:00-07:00 | 2026-09-02T09:30:00-07:00 | 2027-01-29T12:06:00-07:00 | 2027-02-02T09:24:00-07:00 | 124.99 | 124.99 | IWP-CUB-02 |  |  |  |  |  |
| A-1155 | CUB.YARD.03 | Excavation & subgrade prep — CUB grade — bay C1 | WF-CUB-03 | CUB | sitework | 2026-08-17T10:00:00-07:00 | 2026-08-19T08:12:00-07:00 | 18.2 | 1.82 | CAL-6x10 | 5 | 2026-08-17T10:00:00-07:00 | 2026-08-19T08:12:00-07:00 | 2027-01-16T06:12:00-07:00 | 2027-01-18T14:24:00-07:00 | 124.62 | 0.0 | IWP-CUB-03 |  |  |  |  |  |
| A-1156 | CUB.YARD.03 | Equipment pad pour — CUB grade — bay C1 | WF-CUB-03 | CUB | structural | 2026-08-19T08:12:00-07:00 | 2026-08-20T06:18:00-07:00 | 8.1 | 0.81 | CAL-6x10 | 10 | 2026-08-19T08:12:00-07:00 | 2026-08-20T06:18:00-07:00 | 2027-01-18T14:24:00-07:00 | 2027-01-19T12:30:00-07:00 | 124.62 | 0.0 | IWP-CUB-03 | concrete_cip_hot_weather | True | 121.1 | m3 |  |
| A-1157 | CUB.YARD.03 | Anchor bolt & adhesive anchor set — CUB grade — bay C1 | WF-CUB-03 | CUB | structural | 2026-08-22T10:18:00-07:00 | 2026-08-22T15:18:00-07:00 | 5.0 | 0.5 | CAL-6x10 | 3 | 2026-08-22T10:18:00-07:00 | 2026-08-22T15:18:00-07:00 | 2027-01-22T06:30:00-07:00 | 2027-01-22T11:30:00-07:00 | 124.62 | 0.0 | IWP-CUB-03 | adhesive_anchor_epoxy | True | 159.2 | ea |  |
| A-1158 | CUB.YARD.03 | Equipment set & alignment — CUB grade — bay C1 | WF-CUB-03 | CUB | mechanical | 2026-08-22T15:18:00-07:00 | 2026-08-26T13:12:00-07:00 | 27.9 | 2.79 | CAL-6x10 | 6 | 2026-08-22T15:18:00-07:00 | 2026-08-26T13:12:00-07:00 | 2027-01-22T11:30:00-07:00 | 2027-01-26T09:24:00-07:00 | 124.62 | 0.0 | IWP-CUB-03 |  |  |  |  |  |
| A-1159 | CUB.YARD.03 | Pipe rack erection — CUB grade — bay C1 | WF-CUB-03 | CUB | mechanical | 2026-08-26T13:12:00-07:00 | 2026-08-28T10:48:00-07:00 | 17.6 | 1.76 | CAL-6x10 | 6 | 2026-08-26T13:12:00-07:00 | 2026-08-28T10:48:00-07:00 | 2027-01-26T09:24:00-07:00 | 2027-01-28T07:00:00-07:00 | 124.62 | 0.0 | IWP-CUB-03 |  |  |  |  |  |
| A-1160 | CUB.YARD.03 | Pipe rack & equipment coating — CUB grade — bay C1 | WF-CUB-03 | CUB | mechanical | 2026-08-28T10:48:00-07:00 | 2026-08-29T06:24:00-07:00 | 5.6 | 0.56 | CAL-6x10 | 4 | 2026-08-28T10:48:00-07:00 | 2026-08-29T06:24:00-07:00 | 2027-01-28T07:00:00-07:00 | 2027-01-28T12:36:00-07:00 | 124.62 | 0.0 | IWP-CUB-03 | coating_epoxy_structural_steel | True | 1314.2 | m2 |  |
| A-1161 | CUB.YARD.03 | Conduit, grounding & terminations — CUB grade — bay C1 | WF-CUB-03 | CUB | electrical | 2026-08-31T06:48:00-07:00 | 2026-09-02T13:12:00-07:00 | 26.4 | 2.64 | CAL-6x10 | 6 | 2026-08-31T06:48:00-07:00 | 2026-09-02T13:12:00-07:00 | 2027-01-29T13:00:00-07:00 | 2027-02-02T09:24:00-07:00 | 124.62 | 124.62 | IWP-CUB-03 |  |  |  |  |  |
| A-1162 | CUB.YARD.04 | Excavation & subgrade prep — CUB L2 — bay A2 | WF-CUB-04 | CUB | sitework | 2026-08-17T10:00:00-07:00 | 2026-08-19T08:12:00-07:00 | 18.2 | 1.82 | CAL-6x10 | 5 | 2026-08-17T10:00:00-07:00 | 2026-08-19T08:12:00-07:00 | 2027-01-14T14:12:00-07:00 | 2027-01-16T12:24:00-07:00 | 123.42 | 0.0 | IWP-CUB-04 |  |  |  |  |  |
| A-1163 | CUB.YARD.04 | Equipment pad pour — CUB L2 — bay A2 | WF-CUB-04 | CUB | structural | 2026-08-19T08:12:00-07:00 | 2026-08-19T15:42:00-07:00 | 7.5 | 0.75 | CAL-6x10 | 10 | 2026-08-19T08:12:00-07:00 | 2026-08-19T15:42:00-07:00 | 2027-01-16T12:24:00-07:00 | 2027-01-18T09:54:00-07:00 | 123.42 | 0.0 | IWP-CUB-04 | concrete_cip_hot_weather | True | 111.8 | m3 |  |
| A-1164 | CUB.YARD.04 | Anchor bolt & adhesive anchor set — CUB L2 — bay A2 | WF-CUB-04 | CUB | structural | 2026-08-22T09:42:00-07:00 | 2026-08-22T14:06:00-07:00 | 4.4 | 0.44 | CAL-6x10 | 3 | 2026-08-22T09:42:00-07:00 | 2026-08-22T14:06:00-07:00 | 2027-01-20T13:54:00-07:00 | 2027-01-21T08:18:00-07:00 | 123.42 | 0.0 | IWP-CUB-04 | adhesive_anchor_epoxy | True | 139.2 | ea |  |
| A-1165 | CUB.YARD.04 | Equipment set & alignment — CUB L2 — bay A2 | WF-CUB-04 | CUB | mechanical | 2026-08-22T14:06:00-07:00 | 2026-08-26T14:48:00-07:00 | 30.7 | 3.07 | CAL-6x10 | 6 | 2026-08-22T14:06:00-07:00 | 2026-08-26T14:48:00-07:00 | 2027-01-21T08:18:00-07:00 | 2027-01-25T09:00:00-07:00 | 123.42 | 0.0 | IWP-CUB-04 |  |  |  |  |  |
| A-1166 | CUB.YARD.04 | Pipe rack erection — CUB L2 — bay A2 | WF-CUB-04 | CUB | mechanical | 2026-08-26T14:48:00-07:00 | 2026-08-29T08:06:00-07:00 | 23.3 | 2.33 | CAL-6x10 | 6 | 2026-08-26T14:48:00-07:00 | 2026-08-29T08:06:00-07:00 | 2027-01-25T09:00:00-07:00 | 2027-01-27T12:18:00-07:00 | 123.42 | 0.0 | IWP-CUB-04 |  |  |  |  |  |
| A-1167 | CUB.YARD.04 | Pipe rack & equipment coating — CUB L2 — bay A2 | WF-CUB-04 | CUB | mechanical | 2026-08-29T08:06:00-07:00 | 2026-08-29T14:00:00-07:00 | 5.9 | 0.59 | CAL-6x10 | 4 | 2026-08-29T08:06:00-07:00 | 2026-08-29T14:00:00-07:00 | 2027-01-27T12:18:00-07:00 | 2027-01-28T08:12:00-07:00 | 123.42 | 0.0 | IWP-CUB-04 | coating_epoxy_structural_steel | True | 1384.8 | m2 |  |
| A-1168 | CUB.YARD.04 | Conduit, grounding & terminations — CUB L2 — bay A2 | WF-CUB-04 | CUB | electrical | 2026-08-31T14:06:00-07:00 | 2026-09-03T15:12:00-07:00 | 31.1 | 3.11 | CAL-6x10 | 6 | 2026-08-31T14:06:00-07:00 | 2026-09-03T15:12:00-07:00 | 2027-01-29T08:18:00-07:00 | 2027-02-02T09:24:00-07:00 | 123.42 | 123.42 | IWP-CUB-04 |  |  |  |  |  |
| A-1169 | CUB.YARD.05 | Excavation & subgrade prep — CUB L2 — bay B2 | WF-CUB-05 | CUB | sitework | 2026-08-18T10:00:00-07:00 | 2026-08-20T12:54:00-07:00 | 22.9 | 2.29 | CAL-6x10 | 5 | 2026-08-18T10:00:00-07:00 | 2026-08-20T12:54:00-07:00 | 2027-01-14T13:18:00-07:00 | 2027-01-18T06:12:00-07:00 | 122.33 | 0.0 | IWP-CUB-05 |  |  |  |  |  |
| A-1170 | CUB.YARD.05 | Equipment pad pour — CUB L2 — bay B2 | WF-CUB-05 | CUB | structural | 2026-08-20T12:54:00-07:00 | 2026-08-21T10:36:00-07:00 | 7.7 | 0.77 | CAL-6x10 | 10 | 2026-08-20T12:54:00-07:00 | 2026-08-21T10:36:00-07:00 | 2027-01-18T06:12:00-07:00 | 2027-01-18T13:54:00-07:00 | 122.33 | 0.0 | IWP-CUB-05 | concrete_cip_hot_weather | True | 115.9 | m3 | City of Phoenix inspector — reinforcing & embed inspection prior to pour |
| A-1171 | CUB.YARD.05 | Anchor bolt & adhesive anchor set — CUB L2 — bay B2 | WF-CUB-05 | CUB | structural | 2026-08-24T14:36:00-07:00 | 2026-08-25T09:12:00-07:00 | 4.6 | 0.46 | CAL-6x10 | 3 | 2026-08-24T14:36:00-07:00 | 2026-08-25T09:12:00-07:00 | 2027-01-21T07:54:00-07:00 | 2027-01-21T12:30:00-07:00 | 122.33 | 0.0 | IWP-CUB-05 | adhesive_anchor_epoxy | True | 147.2 | ea |  |
| A-1172 | CUB.YARD.05 | Equipment set & alignment — CUB L2 — bay B2 | WF-CUB-05 | CUB | mechanical | 2026-08-25T09:12:00-07:00 | 2026-08-28T09:06:00-07:00 | 29.9 | 2.99 | CAL-6x10 | 6 | 2026-08-25T09:12:00-07:00 | 2026-08-28T09:06:00-07:00 | 2027-01-21T12:30:00-07:00 | 2027-01-25T12:24:00-07:00 | 122.33 | 0.0 | IWP-CUB-05 |  |  |  |  |  |
| A-1173 | CUB.YARD.05 | Pipe rack erection — CUB L2 — bay B2 | WF-CUB-05 | CUB | mechanical | 2026-08-28T09:06:00-07:00 | 2026-08-31T09:12:00-07:00 | 20.1 | 2.01 | CAL-6x10 | 6 | 2026-08-28T09:06:00-07:00 | 2026-08-31T09:12:00-07:00 | 2027-01-25T12:24:00-07:00 | 2027-01-27T12:30:00-07:00 | 122.33 | 0.0 | IWP-CUB-05 |  |  |  |  |  |
| A-1174 | CUB.YARD.05 | Pipe rack & equipment coating — CUB L2 — bay B2 | WF-CUB-05 | CUB | mechanical | 2026-08-31T09:12:00-07:00 | 2026-08-31T14:54:00-07:00 | 5.7 | 0.57 | CAL-6x10 | 4 | 2026-08-31T09:12:00-07:00 | 2026-08-31T14:54:00-07:00 | 2027-01-27T12:30:00-07:00 | 2027-01-28T08:12:00-07:00 | 122.33 | 0.0 | IWP-CUB-05 | coating_epoxy_structural_steel | True | 1335.1 | m2 |  |
| A-1175 | CUB.YARD.05 | Conduit, grounding & terminations — CUB L2 — bay B2 | WF-CUB-05 | CUB | electrical | 2026-09-01T15:12:00-07:00 | 2026-09-05T06:06:00-07:00 | 30.9 | 3.09 | CAL-6x10 | 6 | 2026-09-01T15:12:00-07:00 | 2026-09-05T06:06:00-07:00 | 2027-01-29T08:30:00-07:00 | 2027-02-02T09:24:00-07:00 | 122.33 | 122.33 | IWP-CUB-05 |  |  |  |  |  |
| A-1176 | WHSE.WAREHOUSE.01 | Subgrade & vapour barrier — WHSE grade — bay A1 | WF-WHSE-01 | WHSE | sitework | 2026-08-21T06:00:00-07:00 | 2026-08-22T14:06:00-07:00 | 18.1 | 1.81 | CAL-6x10 | 5 | 2026-08-21T06:00:00-07:00 | 2026-08-22T14:06:00-07:00 | 2026-12-21T14:36:00-07:00 | 2026-12-23T12:42:00-07:00 | 101.86 | 0.0 | IWP-WHSE-01 |  |  |  |  |  |
| A-1177 | WHSE.WAREHOUSE.01 | Slab on grade pour — WHSE grade — bay A1 | WF-WHSE-01 | WHSE | structural | 2026-08-22T14:06:00-07:00 | 2026-08-24T12:06:00-07:00 | 8.0 | 0.8 | CAL-6x10 | 12 | 2026-08-22T14:06:00-07:00 | 2026-08-24T12:06:00-07:00 | 2026-12-23T12:42:00-07:00 | 2026-12-26T10:42:00-07:00 | 101.86 | 0.0 | IWP-WHSE-01 | concrete_cip_hot_weather | True | 422.5 | m3 |  |
| A-1178 | WHSE.WAREHOUSE.01 | Precast panel erection — WHSE grade — bay A1 | WF-WHSE-01 | WHSE | structural | 2026-09-01T14:06:00-07:00 | 2026-09-05T08:54:00-07:00 | 34.8 | 3.48 | CAL-6x10 | 8 | 2026-09-01T14:06:00-07:00 | 2026-09-05T08:54:00-07:00 | 2027-01-05T12:42:00-07:00 | 2027-01-09T07:30:00-07:00 | 101.86 | 0.0 | IWP-WHSE-01 |  |  |  |  |  |
| A-1179 | WHSE.WAREHOUSE.01 | Connection weld — WHSE grade — bay A1 | WF-WHSE-01 | WHSE | structural | 2026-09-05T08:54:00-07:00 | 2026-09-08T06:54:00-07:00 | 8.0 | 0.8 | CAL-6x10 | 4 | 2026-09-05T08:54:00-07:00 | 2026-09-08T06:54:00-07:00 | 2027-01-09T07:30:00-07:00 | 2027-01-09T15:30:00-07:00 | 101.86 | 0.0 | IWP-WHSE-01 | structural_welding_preheat | True | 139.3 | ea |  |
| A-1180 | WHSE.WAREHOUSE.01 | Panel joint sealant — WHSE grade — bay A1 | WF-WHSE-01 | WHSE | architectural | 2026-09-08T06:54:00-07:00 | 2026-09-08T14:00:00-07:00 | 7.1 | 0.71 | CAL-6x10 | 4 | 2026-09-08T06:54:00-07:00 | 2026-09-08T14:00:00-07:00 | 2027-01-09T15:30:00-07:00 | 2027-01-11T12:36:00-07:00 | 101.86 | 0.0 | IWP-WHSE-01 | sealant_silicone_weatherseal | True | 1821.7 | lf |  |
| A-1181 | WHSE.WAREHOUSE.01 | Spray-applied fireproofing — WHSE grade — bay A1 | WF-WHSE-01 | WHSE | structural | 2026-09-08T14:00:00-07:00 | 2026-09-09T15:06:00-07:00 | 11.1 | 1.11 | CAL-6x10 | 6 | 2026-09-08T14:00:00-07:00 | 2026-09-09T15:06:00-07:00 | 2027-01-11T12:36:00-07:00 | 2027-01-12T13:42:00-07:00 | 101.86 | 0.0 | IWP-WHSE-01 | sfrm_spray_applied_fireproofing | True | 2673.6 | m2 |  |
| A-1182 | WHSE.WAREHOUSE.01 | Interior floor marking — WHSE grade — bay A1 | WF-WHSE-01 | WHSE | architectural | 2026-09-12T09:06:00-07:00 | 2026-09-12T14:24:00-07:00 | 5.3 | 0.53 | CAL-6x10 | 4 | 2026-09-12T09:06:00-07:00 | 2026-09-12T14:24:00-07:00 | 2027-01-15T07:42:00-07:00 | 2027-01-15T13:00:00-07:00 | 101.86 | 101.86 | IWP-WHSE-01 | pavement_marking_waterborne | True | 3360.1 | lf |  |
| A-1183 | WHSE.WAREHOUSE.02 | Subgrade & vapour barrier — WHSE grade — bay B1 | WF-WHSE-02 | WHSE | sitework | 2026-08-24T06:00:00-07:00 | 2026-08-25T13:54:00-07:00 | 17.9 | 1.79 | CAL-6x10 | 5 | 2026-08-24T06:00:00-07:00 | 2026-08-25T13:54:00-07:00 | 2027-01-11T13:36:00-07:00 | 2027-01-13T11:30:00-07:00 | 114.76 | 0.0 | IWP-WHSE-02 |  |  |  |  |  |
| A-1184 | WHSE.WAREHOUSE.02 | Slab on grade pour — WHSE grade — bay B1 | WF-WHSE-02 | WHSE | structural | 2026-08-25T13:54:00-07:00 | 2026-08-26T13:12:00-07:00 | 9.3 | 0.93 | CAL-6x10 | 12 | 2026-08-25T13:54:00-07:00 | 2026-08-26T13:12:00-07:00 | 2027-01-13T11:30:00-07:00 | 2027-01-14T10:48:00-07:00 | 114.76 | 0.0 | IWP-WHSE-02 | concrete_cip_hot_weather | True | 489.4 | m3 |  |
| A-1185 | WHSE.WAREHOUSE.02 | Precast panel erection — WHSE grade — bay B1 | WF-WHSE-02 | WHSE | structural | 2026-09-03T15:12:00-07:00 | 2026-09-09T09:06:00-07:00 | 33.9 | 3.39 | CAL-6x10 | 8 | 2026-09-03T15:12:00-07:00 | 2026-09-09T09:06:00-07:00 | 2027-01-22T12:48:00-07:00 | 2027-01-27T06:42:00-07:00 | 114.76 | 0.0 | IWP-WHSE-02 |  |  |  |  |  |
| A-1186 | WHSE.WAREHOUSE.02 | Connection weld — WHSE grade — bay B1 | WF-WHSE-02 | WHSE | structural | 2026-09-09T09:06:00-07:00 | 2026-09-10T06:12:00-07:00 | 7.1 | 0.71 | CAL-6x10 | 4 | 2026-09-09T09:06:00-07:00 | 2026-09-10T06:12:00-07:00 | 2027-01-27T06:42:00-07:00 | 2027-01-27T13:48:00-07:00 | 114.76 | 0.0 | IWP-WHSE-02 | structural_welding_preheat | True | 125.0 | ea |  |
| A-1187 | WHSE.WAREHOUSE.02 | Panel joint sealant — WHSE grade — bay B1 | WF-WHSE-02 | WHSE | architectural | 2026-09-10T06:12:00-07:00 | 2026-09-10T12:18:00-07:00 | 6.1 | 0.61 | CAL-6x10 | 4 | 2026-09-10T06:12:00-07:00 | 2026-09-10T12:18:00-07:00 | 2027-01-27T13:48:00-07:00 | 2027-01-28T09:54:00-07:00 | 114.76 | 0.0 | IWP-WHSE-02 | sealant_silicone_weatherseal | True | 1579.4 | lf |  |
| A-1188 | WHSE.WAREHOUSE.02 | Spray-applied fireproofing — WHSE grade — bay B1 | WF-WHSE-02 | WHSE | structural | 2026-09-10T12:18:00-07:00 | 2026-09-11T12:18:00-07:00 | 10.0 | 1.0 | CAL-6x10 | 6 | 2026-09-10T12:18:00-07:00 | 2026-09-11T12:18:00-07:00 | 2027-01-28T09:54:00-07:00 | 2027-01-29T09:54:00-07:00 | 114.76 | 0.0 | IWP-WHSE-02 | sfrm_spray_applied_fireproofing | True | 2390.0 | m2 |  |
| A-1189 | WHSE.WAREHOUSE.02 | Interior floor marking — WHSE grade — bay B1 | WF-WHSE-02 | WHSE | architectural | 2026-09-15T06:18:00-07:00 | 2026-09-15T11:48:00-07:00 | 5.5 | 0.55 | CAL-6x10 | 4 | 2026-09-15T06:18:00-07:00 | 2026-09-15T11:48:00-07:00 | 2027-02-01T13:54:00-07:00 | 2027-02-02T09:24:00-07:00 | 114.76 | 114.76 | IWP-WHSE-02 | pavement_marking_waterborne | True | 3502.4 | lf |  |
| A-1190 | WHSE.WAREHOUSE.03 | Subgrade & vapour barrier — WHSE grade — bay A2 | WF-WHSE-03 | WHSE | sitework | 2026-08-24T14:00:00-07:00 | 2026-08-26T09:54:00-07:00 | 15.9 | 1.59 | CAL-6x10 | 5 | 2026-08-24T14:00:00-07:00 | 2026-08-26T09:54:00-07:00 | 2027-01-12T09:36:00-07:00 | 2027-01-13T15:30:00-07:00 | 114.56 | 0.0 | IWP-WHSE-03 |  |  |  |  |  |
| A-1191 | WHSE.WAREHOUSE.03 | Slab on grade pour — WHSE grade — bay A2 | WF-WHSE-03 | WHSE | structural | 2026-08-26T09:54:00-07:00 | 2026-08-27T07:18:00-07:00 | 7.4 | 0.74 | CAL-6x10 | 12 | 2026-08-26T09:54:00-07:00 | 2026-08-27T07:18:00-07:00 | 2027-01-13T15:30:00-07:00 | 2027-01-14T12:54:00-07:00 | 114.56 | 0.0 | IWP-WHSE-03 | concrete_cip_hot_weather | True | 387.2 | m3 |  |
| A-1192 | WHSE.WAREHOUSE.03 | Precast panel erection — WHSE grade — bay A2 | WF-WHSE-03 | WHSE | structural | 2026-09-04T09:18:00-07:00 | 2026-09-09T09:30:00-07:00 | 30.2 | 3.02 | CAL-6x10 | 8 | 2026-09-04T09:18:00-07:00 | 2026-09-09T09:30:00-07:00 | 2027-01-22T14:54:00-07:00 | 2027-01-26T15:06:00-07:00 | 114.56 | 0.0 | IWP-WHSE-03 |  |  |  |  |  |
| A-1193 | WHSE.WAREHOUSE.03 | Connection weld — WHSE grade — bay A2 | WF-WHSE-03 | WHSE | structural | 2026-09-09T09:30:00-07:00 | 2026-09-10T08:12:00-07:00 | 8.7 | 0.87 | CAL-6x10 | 4 | 2026-09-09T09:30:00-07:00 | 2026-09-10T08:12:00-07:00 | 2027-01-26T15:06:00-07:00 | 2027-01-27T13:48:00-07:00 | 114.56 | 0.0 | IWP-WHSE-03 | structural_welding_preheat | True | 153.0 | ea |  |
| A-1194 | WHSE.WAREHOUSE.03 | Panel joint sealant — WHSE grade — bay A2 | WF-WHSE-03 | WHSE | architectural | 2026-09-10T08:12:00-07:00 | 2026-09-10T14:36:00-07:00 | 6.4 | 0.64 | CAL-6x10 | 4 | 2026-09-10T08:12:00-07:00 | 2026-09-10T14:36:00-07:00 | 2027-01-27T13:48:00-07:00 | 2027-01-28T10:12:00-07:00 | 114.56 | 0.0 | IWP-WHSE-03 | sealant_silicone_weatherseal | True | 1647.8 | lf |  |
| A-1195 | WHSE.WAREHOUSE.03 | Spray-applied fireproofing — WHSE grade — bay A2 | WF-WHSE-03 | WHSE | structural | 2026-09-10T14:36:00-07:00 | 2026-09-11T15:06:00-07:00 | 10.5 | 1.05 | CAL-6x10 | 6 | 2026-09-10T14:36:00-07:00 | 2026-09-11T15:06:00-07:00 | 2027-01-28T10:12:00-07:00 | 2027-01-29T10:42:00-07:00 | 114.56 | 0.0 | IWP-WHSE-03 | sfrm_spray_applied_fireproofing | True | 2528.0 | m2 |  |
| A-1196 | WHSE.WAREHOUSE.03 | Interior floor marking — WHSE grade — bay A2 | WF-WHSE-03 | WHSE | architectural | 2026-09-15T09:06:00-07:00 | 2026-09-15T13:48:00-07:00 | 4.7 | 0.47 | CAL-6x10 | 4 | 2026-09-15T09:06:00-07:00 | 2026-09-15T13:48:00-07:00 | 2027-02-01T14:42:00-07:00 | 2027-02-02T09:24:00-07:00 | 114.56 | 114.56 | IWP-WHSE-03 | pavement_marking_waterborne | True | 2997.3 | lf |  |
| A-1197 | WHSE.WAREHOUSE.04 | Subgrade & vapour barrier — WHSE grade — bay B2 | WF-WHSE-04 | WHSE | sitework | 2026-08-25T09:00:00-07:00 | 2026-08-26T14:42:00-07:00 | 15.7 | 1.57 | CAL-6x10 | 5 | 2026-08-25T09:00:00-07:00 | 2026-08-26T14:42:00-07:00 | 2027-01-12T11:00:00-07:00 | 2027-01-14T06:42:00-07:00 | 114.2 | 0.0 | IWP-WHSE-04 |  |  |  |  |  |
| A-1198 | WHSE.WAREHOUSE.04 | Slab on grade pour — WHSE grade — bay B2 | WF-WHSE-04 | WHSE | structural | 2026-08-26T14:42:00-07:00 | 2026-08-27T13:48:00-07:00 | 9.1 | 0.91 | CAL-6x10 | 12 | 2026-08-26T14:42:00-07:00 | 2026-08-27T13:48:00-07:00 | 2027-01-14T06:42:00-07:00 | 2027-01-14T15:48:00-07:00 | 114.2 | 0.0 | IWP-WHSE-04 | concrete_cip_hot_weather | True | 479.8 | m3 |  |
| A-1199 | WHSE.WAREHOUSE.04 | Precast panel erection — WHSE grade — bay B2 | WF-WHSE-04 | WHSE | structural | 2026-09-04T15:48:00-07:00 | 2026-09-09T11:48:00-07:00 | 26.0 | 2.6 | CAL-6x10 | 8 | 2026-09-04T15:48:00-07:00 | 2026-09-09T11:48:00-07:00 | 2027-01-23T07:48:00-07:00 | 2027-01-26T13:48:00-07:00 | 114.2 | 0.0 | IWP-WHSE-04 |  |  |  |  |  |
| A-1200 | WHSE.WAREHOUSE.04 | Connection weld — WHSE grade — bay B2 | WF-WHSE-04 | WHSE | structural | 2026-09-09T11:48:00-07:00 | 2026-09-10T10:12:00-07:00 | 8.4 | 0.84 | CAL-6x10 | 4 | 2026-09-09T11:48:00-07:00 | 2026-09-10T10:12:00-07:00 | 2027-01-26T13:48:00-07:00 | 2027-01-27T12:12:00-07:00 | 114.2 | 0.0 | IWP-WHSE-04 | structural_welding_preheat | True | 146.4 | ea |  |
| A-1201 | WHSE.WAREHOUSE.04 | Panel joint sealant — WHSE grade — bay B2 | WF-WHSE-04 | WHSE | architectural | 2026-09-10T10:12:00-07:00 | 2026-09-11T08:18:00-07:00 | 8.1 | 0.81 | CAL-6x10 | 4 | 2026-09-10T10:12:00-07:00 | 2026-09-11T08:18:00-07:00 | 2027-01-27T12:12:00-07:00 | 2027-01-28T10:18:00-07:00 | 114.2 | 0.0 | IWP-WHSE-04 | sealant_silicone_weatherseal | True | 2087.0 | lf |  |
| A-1202 | WHSE.WAREHOUSE.04 | Spray-applied fireproofing — WHSE grade — bay B2 | WF-WHSE-04 | WHSE | structural | 2026-09-11T08:18:00-07:00 | 2026-09-12T08:54:00-07:00 | 10.6 | 1.06 | CAL-6x10 | 6 | 2026-09-11T08:18:00-07:00 | 2026-09-12T08:54:00-07:00 | 2027-01-28T10:18:00-07:00 | 2027-01-29T10:54:00-07:00 | 114.2 | 0.0 | IWP-WHSE-04 | sfrm_spray_applied_fireproofing | True | 2535.0 | m2 |  |
| A-1203 | WHSE.WAREHOUSE.04 | Interior floor marking — WHSE grade — bay B2 | WF-WHSE-04 | WHSE | architectural | 2026-09-15T12:54:00-07:00 | 2026-09-16T07:24:00-07:00 | 4.5 | 0.45 | CAL-6x10 | 4 | 2026-09-15T12:54:00-07:00 | 2026-09-16T07:24:00-07:00 | 2027-02-01T14:54:00-07:00 | 2027-02-02T09:24:00-07:00 | 114.2 | 114.2 | IWP-WHSE-04 | pavement_marking_waterborne | True | 2856.5 | lf |  |
| A-1204 | CT.YARD.01 | Excavation & subgrade prep — CT grade — bay A1 | WF-CT-01 | CT | sitework | 2026-08-24T12:00:00-07:00 | 2026-08-26T14:42:00-07:00 | 22.7 | 2.27 | CAL-6x10 | 5 | 2026-08-24T12:00:00-07:00 | 2026-08-26T14:42:00-07:00 | 2027-01-14T15:30:00-07:00 | 2027-01-18T08:12:00-07:00 | 117.35 | 0.0 | IWP-CT-01 |  |  |  |  |  |
| A-1205 | CT.YARD.01 | Equipment pad pour — CT grade — bay A1 | WF-CT-01 | CT | structural | 2026-08-26T14:42:00-07:00 | 2026-08-27T13:54:00-07:00 | 9.2 | 0.92 | CAL-6x10 | 10 | 2026-08-26T14:42:00-07:00 | 2026-08-27T13:54:00-07:00 | 2027-01-18T08:12:00-07:00 | 2027-01-19T07:24:00-07:00 | 117.35 | 0.0 | IWP-CT-01 | concrete_cip_hot_weather | True | 138.5 | m3 | City of Phoenix inspector — reinforcing & embed inspection prior to pour |
| A-1206 | CT.YARD.01 | Anchor bolt & adhesive anchor set — CT grade — bay A1 | WF-CT-01 | CT | structural | 2026-08-31T07:54:00-07:00 | 2026-08-31T13:00:00-07:00 | 5.1 | 0.51 | CAL-6x10 | 3 | 2026-08-31T07:54:00-07:00 | 2026-08-31T13:00:00-07:00 | 2027-01-21T11:24:00-07:00 | 2027-01-22T06:30:00-07:00 | 117.35 | 0.0 | IWP-CT-01 | adhesive_anchor_epoxy | True | 164.2 | ea |  |
| A-1207 | CT.YARD.01 | Equipment set & alignment — CT grade — bay A1 | WF-CT-01 | CT | mechanical | 2026-08-31T13:00:00-07:00 | 2026-09-03T08:36:00-07:00 | 25.6 | 2.56 | CAL-6x10 | 6 | 2026-08-31T13:00:00-07:00 | 2026-09-03T08:36:00-07:00 | 2027-01-22T06:30:00-07:00 | 2027-01-25T12:06:00-07:00 | 117.35 | 0.0 | IWP-CT-01 |  |  |  |  |  |
| A-1208 | CT.YARD.01 | Pipe rack erection — CT grade — bay A1 | WF-CT-01 | CT | mechanical | 2026-09-03T08:36:00-07:00 | 2026-09-05T06:00:00-07:00 | 17.4 | 1.74 | CAL-6x10 | 6 | 2026-09-03T08:36:00-07:00 | 2026-09-05T06:00:00-07:00 | 2027-01-25T12:06:00-07:00 | 2027-01-27T09:30:00-07:00 | 117.35 | 0.0 | IWP-CT-01 |  |  |  |  |  |
| A-1209 | CT.YARD.01 | Pipe rack & equipment coating — CT grade — bay A1 | WF-CT-01 | CT | mechanical | 2026-09-05T06:00:00-07:00 | 2026-09-05T11:24:00-07:00 | 5.4 | 0.54 | CAL-6x10 | 4 | 2026-09-05T06:00:00-07:00 | 2026-09-05T11:24:00-07:00 | 2027-01-27T09:30:00-07:00 | 2027-01-27T14:54:00-07:00 | 117.35 | 0.0 | IWP-CT-01 | coating_epoxy_structural_steel | True | 1269.1 | m2 |  |
| A-1210 | CT.YARD.01 | Conduit, grounding & terminations — CT grade — bay A1 | WF-CT-01 | CT | electrical | 2026-09-08T12:00:00-07:00 | 2026-09-11T15:54:00-07:00 | 33.9 | 3.39 | CAL-6x10 | 6 | 2026-09-08T12:00:00-07:00 | 2026-09-11T15:54:00-07:00 | 2027-01-28T15:30:00-07:00 | 2027-02-02T09:24:00-07:00 | 117.35 | 117.35 | IWP-CT-01 |  |  |  |  |  |

| id | wbs | name | work_face_id | structure_id | discipline | planned_start | planned_finish | duration_h | duration_d | calendar_id | crew_size | early_start | early_finish | late_start | late_finish | total_float_d | free_float_d | is_near_critical | iwp_id | trade_id | thermal_sensitive | quantity | quantity_unit | hold_point | milestone_date | milestone_name |
| --- | --- | --- | --- | --- | --- | --- | --- | --- | --- | --- | --- | --- | --- | --- | --- | --- | --- | --- | --- | --- | --- | --- | --- | --- | --- | --- |
| A-1211 | CT.YARD.02 | Excavation & subgrade prep — CT grade — bay B1 | WF-CT-02 | CT | sitework | 2026-08-24T07:00:00-07:00 | 2026-08-25T14:12:00-07:00 | 17.2 | 1.72 | CAL-6x10 | 5 | 2026-08-24T07:00:00-07:00 | 2026-08-25T14:12:00-07:00 | 2027-01-14T09:12:00-07:00 | 2027-01-16T06:24:00-07:00 | 117.22 | 0.0 |  | IWP-CT-02 |  |  |  |  |  |  |  |
| A-1212 | CT.YARD.02 | Equipment pad pour — CT grade — bay B1 | WF-CT-02 | CT | structural | 2026-08-25T14:12:00-07:00 | 2026-08-26T11:30:00-07:00 | 7.3 | 0.73 | CAL-6x10 | 10 | 2026-08-25T14:12:00-07:00 | 2026-08-26T11:30:00-07:00 | 2027-01-16T06:24:00-07:00 | 2027-01-16T13:42:00-07:00 | 117.22 | 0.0 |  | IWP-CT-02 | concrete_cip_hot_weather | True | 109.0 | m3 |  |  |  |
| A-1213 | CT.YARD.02 | Anchor bolt & adhesive anchor set — CT grade — bay B1 | WF-CT-02 | CT | structural | 2026-08-28T15:30:00-07:00 | 2026-08-29T11:24:00-07:00 | 5.9 | 0.59 | CAL-6x10 | 3 | 2026-08-28T15:30:00-07:00 | 2026-08-29T11:24:00-07:00 | 2027-01-20T07:42:00-07:00 | 2027-01-20T13:36:00-07:00 | 117.22 | 0.0 |  | IWP-CT-02 | adhesive_anchor_epoxy | True | 189.2 | ea |  |  |  |
| A-1214 | CT.YARD.02 | Equipment set & alignment — CT grade — bay B1 | WF-CT-02 | CT | mechanical | 2026-08-29T11:24:00-07:00 | 2026-09-03T06:24:00-07:00 | 35.0 | 3.5 | CAL-6x10 | 6 | 2026-08-29T11:24:00-07:00 | 2026-09-03T06:24:00-07:00 | 2027-01-20T13:36:00-07:00 | 2027-01-25T08:36:00-07:00 | 117.22 | 0.0 |  | IWP-CT-02 |  |  |  |  |  |  |  |
| A-1215 | CT.YARD.02 | Pipe rack erection — CT grade — bay B1 | WF-CT-02 | CT | mechanical | 2026-09-03T06:24:00-07:00 | 2026-09-05T10:00:00-07:00 | 23.6 | 2.36 | CAL-6x10 | 6 | 2026-09-03T06:24:00-07:00 | 2026-09-05T10:00:00-07:00 | 2027-01-25T08:36:00-07:00 | 2027-01-27T12:12:00-07:00 | 117.22 | 0.0 |  | IWP-CT-02 |  |  |  |  |  |  |  |
| A-1216 | CT.YARD.02 | Pipe rack & equipment coating — CT grade — bay B1 | WF-CT-02 | CT | mechanical | 2026-09-05T10:00:00-07:00 | 2026-09-05T15:42:00-07:00 | 5.7 | 0.57 | CAL-6x10 | 4 | 2026-09-05T10:00:00-07:00 | 2026-09-05T15:42:00-07:00 | 2027-01-27T12:12:00-07:00 | 2027-01-28T07:54:00-07:00 | 117.22 | 0.0 |  | IWP-CT-02 | coating_epoxy_structural_steel | True | 1325.4 | m2 |  |  |  |
| A-1217 | CT.YARD.02 | Conduit, grounding & terminations — CT grade — bay B1 | WF-CT-02 | CT | electrical | 2026-09-09T06:00:00-07:00 | 2026-09-12T07:12:00-07:00 | 31.2 | 3.12 | CAL-6x10 | 6 | 2026-09-09T06:00:00-07:00 | 2026-09-12T07:12:00-07:00 | 2027-01-29T08:12:00-07:00 | 2027-02-02T09:24:00-07:00 | 117.22 | 117.22 |  | IWP-CT-02 |  |  |  |  |  |  |  |
| A-1218 | CT.YARD.03 | Excavation & subgrade prep — CT L2 — bay A2 | WF-CT-03 | CT | sitework | 2026-08-24T12:00:00-07:00 | 2026-08-26T13:12:00-07:00 | 21.2 | 2.12 | CAL-6x10 | 5 | 2026-08-24T12:00:00-07:00 | 2026-08-26T13:12:00-07:00 | 2027-01-13T13:48:00-07:00 | 2027-01-15T15:00:00-07:00 | 116.18 | 0.0 |  | IWP-CT-03 |  |  |  |  |  |  |  |
| A-1219 | CT.YARD.03 | Equipment pad pour — CT L2 — bay A2 | WF-CT-03 | CT | structural | 2026-08-26T13:12:00-07:00 | 2026-08-27T12:30:00-07:00 | 9.3 | 0.93 | CAL-6x10 | 10 | 2026-08-26T13:12:00-07:00 | 2026-08-27T12:30:00-07:00 | 2027-01-15T15:00:00-07:00 | 2027-01-16T14:18:00-07:00 | 116.18 | 0.0 |  | IWP-CT-03 | concrete_cip_hot_weather | True | 139.2 | m3 |  |  |  |
| A-1220 | CT.YARD.03 | Anchor bolt & adhesive anchor set — CT L2 — bay A2 | WF-CT-03 | CT | structural | 2026-08-31T06:30:00-07:00 | 2026-08-31T11:00:00-07:00 | 4.5 | 0.45 | CAL-6x10 | 3 | 2026-08-31T06:30:00-07:00 | 2026-08-31T11:00:00-07:00 | 2027-01-20T08:18:00-07:00 | 2027-01-20T12:48:00-07:00 | 116.18 | 0.0 |  | IWP-CT-03 | adhesive_anchor_epoxy | True | 143.5 | ea |  |  |  |
| A-1221 | CT.YARD.03 | Equipment set & alignment — CT L2 — bay A2 | WF-CT-03 | CT | mechanical | 2026-08-31T11:00:00-07:00 | 2026-09-04T06:18:00-07:00 | 35.3 | 3.53 | CAL-6x10 | 6 | 2026-08-31T11:00:00-07:00 | 2026-09-04T06:18:00-07:00 | 2027-01-20T12:48:00-07:00 | 2027-01-25T08:06:00-07:00 | 116.18 | 0.0 |  | IWP-CT-03 |  |  |  |  |  |  |  |
| A-1222 | CT.YARD.03 | Pipe rack erection — CT L2 — bay A2 | WF-CT-03 | CT | mechanical | 2026-09-04T06:18:00-07:00 | 2026-09-05T15:42:00-07:00 | 19.4 | 1.94 | CAL-6x10 | 6 | 2026-09-04T06:18:00-07:00 | 2026-09-05T15:42:00-07:00 | 2027-01-25T08:06:00-07:00 | 2027-01-27T07:30:00-07:00 | 116.18 | 0.0 |  | IWP-CT-03 |  |  |  |  |  |  |  |
| A-1223 | CT.YARD.03 | Pipe rack & equipment coating — CT L2 — bay A2 | WF-CT-03 | CT | mechanical | 2026-09-05T15:42:00-07:00 | 2026-09-08T12:06:00-07:00 | 6.4 | 0.64 | CAL-6x10 | 4 | 2026-09-05T15:42:00-07:00 | 2026-09-08T12:06:00-07:00 | 2027-01-27T07:30:00-07:00 | 2027-01-27T13:54:00-07:00 | 116.18 | 0.0 |  | IWP-CT-03 | coating_epoxy_structural_steel | True | 1489.6 | m2 |  |  |  |
| A-1224 | CT.YARD.03 | Conduit, grounding & terminations — CT L2 — bay A2 | WF-CT-03 | CT | electrical | 2026-09-09T11:42:00-07:00 | 2026-09-14T07:36:00-07:00 | 35.9 | 3.59 | CAL-6x10 | 6 | 2026-09-09T11:42:00-07:00 | 2026-09-14T07:36:00-07:00 | 2027-01-28T13:30:00-07:00 | 2027-02-02T09:24:00-07:00 | 116.18 | 116.18 |  | IWP-CT-03 |  |  |  |  |  |  |  |
| A-1225 | SUB.YARD.01 | Excavation & duct bank — SUB grade — bay A1 | WF-SUB-01 | SUB | sitework | 2026-08-27T09:00:00-07:00 | 2026-08-31T07:36:00-07:00 | 28.6 | 2.86 | CAL-6x10 | 6 | 2026-08-27T09:00:00-07:00 | 2026-08-31T07:36:00-07:00 | 2027-01-14T11:48:00-07:00 | 2027-01-18T10:24:00-07:00 | 114.28 | 0.0 |  | IWP-SUB-01 |  |  |  |  |  |  |  |
| A-1226 | SUB.YARD.01 | Duct bank encasement pour — SUB grade — bay A1 | WF-SUB-01 | SUB | electrical | 2026-08-31T07:36:00-07:00 | 2026-09-01T06:54:00-07:00 | 9.3 | 0.93 | CAL-6x10 | 8 | 2026-08-31T07:36:00-07:00 | 2026-09-01T06:54:00-07:00 | 2027-01-18T10:24:00-07:00 | 2027-01-19T09:42:00-07:00 | 114.28 | 0.0 |  | IWP-SUB-01 | concrete_cip_hot_weather | True | 110.7 | m3 |  |  |  |
| A-1227 | SUB.YARD.01 | Transformer pad pour — SUB grade — bay A1 | WF-SUB-01 | SUB | structural | 2026-09-03T10:54:00-07:00 | 2026-09-04T08:18:00-07:00 | 7.4 | 0.74 | CAL-6x10 | 10 | 2026-09-03T10:54:00-07:00 | 2026-09-04T08:18:00-07:00 | 2027-01-21T13:42:00-07:00 | 2027-01-22T11:06:00-07:00 | 114.28 | 0.0 |  | IWP-SUB-01 | concrete_cip_hot_weather | True | 128.9 | m3 |  |  |  |
| A-1228 | SUB.YARD.01 | Anchor & baseplate grout — SUB grade — bay A1 | WF-SUB-01 | SUB | structural | 2026-09-08T12:18:00-07:00 | 2026-09-09T08:12:00-07:00 | 5.9 | 0.59 | CAL-6x10 | 3 | 2026-09-08T12:18:00-07:00 | 2026-09-09T08:12:00-07:00 | 2027-01-25T15:06:00-07:00 | 2027-01-26T11:00:00-07:00 | 114.28 | 0.0 |  | IWP-SUB-01 | adhesive_anchor_epoxy | True | 130.8 | ea |  |  |  |
| A-1229 | SUB.YARD.01 | Switchgear set — SUB grade — bay A1 | WF-SUB-01 | SUB | electrical | 2026-09-09T08:12:00-07:00 | 2026-09-10T15:36:00-07:00 | 17.4 | 1.74 | CAL-6x10 | 5 | 2026-09-09T08:12:00-07:00 | 2026-09-10T15:36:00-07:00 | 2027-01-26T11:00:00-07:00 | 2027-01-28T08:24:00-07:00 | 114.28 | 0.0 |  | IWP-SUB-01 |  |  |  |  |  |  |  |
| A-1230 | SUB.YARD.01 | Steel structure coating touch-up — SUB grade — bay A1 | WF-SUB-01 | SUB | structural | 2026-09-10T15:36:00-07:00 | 2026-09-11T11:48:00-07:00 | 6.2 | 0.62 | CAL-6x10 | 4 | 2026-09-10T15:36:00-07:00 | 2026-09-11T11:48:00-07:00 | 2027-01-28T08:24:00-07:00 | 2027-01-28T14:36:00-07:00 | 114.28 | 0.0 |  | IWP-SUB-01 | coating_epoxy_structural_steel | True | 927.6 | m2 |  |  |  |
| A-1231 | SUB.YARD.01 | Cable pull & termination — SUB grade — bay A1 | WF-SUB-01 | SUB | electrical | 2026-09-11T11:48:00-07:00 | 2026-09-16T06:36:00-07:00 | 34.8 | 3.48 | CAL-6x10 | 6 | 2026-09-11T11:48:00-07:00 | 2026-09-16T06:36:00-07:00 | 2027-01-28T14:36:00-07:00 | 2027-02-02T09:24:00-07:00 | 114.28 | 114.28 |  | IWP-SUB-01 |  |  |  |  |  |  |  |
| A-1232 | SUB.YARD.02 | Excavation & duct bank — SUB grade — bay B1 | WF-SUB-02 | SUB | sitework | 2026-08-29T07:00:00-07:00 | 2026-09-01T15:06:00-07:00 | 28.1 | 2.81 | CAL-6x10 | 6 | 2026-08-29T07:00:00-07:00 | 2026-09-01T15:06:00-07:00 | 2026-08-29T13:00:00-07:00 | 2026-09-02T11:06:00-07:00 | 0.6 | 0.0 | True | IWP-SUB-02 |  |  |  |  |  |  |  |
| A-1233 | SUB.YARD.02 | Duct bank encasement pour — SUB grade — bay B1 | WF-SUB-02 | SUB | electrical | 2026-09-01T15:06:00-07:00 | 2026-09-02T14:00:00-07:00 | 8.9 | 0.89 | CAL-6x10 | 8 | 2026-09-01T15:06:00-07:00 | 2026-09-02T14:00:00-07:00 | 2026-09-02T11:06:00-07:00 | 2026-09-03T10:00:00-07:00 | 0.6 | 0.0 | True | IWP-SUB-02 | concrete_cip_hot_weather | True | 105.4 | m3 |  |  |  |
| A-1234 | SUB.YARD.02 | Transformer pad pour — SUB grade — bay B1 | WF-SUB-02 | SUB | structural | 2026-09-05T08:00:00-07:00 | 2026-09-05T15:54:00-07:00 | 7.9 | 0.79 | CAL-6x10 | 10 | 2026-09-05T08:00:00-07:00 | 2026-09-05T15:54:00-07:00 | 2026-09-05T14:00:00-07:00 | 2026-09-08T11:54:00-07:00 | 0.6 | 0.0 | True | IWP-SUB-02 | concrete_cip_hot_weather | True | 138.2 | m3 |  |  |  |
| A-1235 | SUB.YARD.02 | Anchor & baseplate grout — SUB grade — bay B1 | WF-SUB-02 | SUB | structural | 2026-09-10T09:54:00-07:00 | 2026-09-10T14:36:00-07:00 | 4.7 | 0.47 | CAL-6x10 | 3 | 2026-09-10T09:54:00-07:00 | 2026-09-10T14:36:00-07:00 | 2026-09-10T15:54:00-07:00 | 2026-09-11T10:36:00-07:00 | 0.6 | 0.0 | True | IWP-SUB-02 | adhesive_anchor_epoxy | True | 103.3 | ea |  |  |  |
| A-1236 | SUB.YARD.02 | Switchgear set — SUB grade — bay B1 | WF-SUB-02 | SUB | electrical | 2026-09-10T14:36:00-07:00 | 2026-09-12T12:30:00-07:00 | 17.9 | 1.79 | CAL-6x10 | 5 | 2026-09-10T14:36:00-07:00 | 2026-09-12T12:30:00-07:00 | 2026-09-11T10:36:00-07:00 | 2026-09-14T08:30:00-07:00 | 0.6 | 0.0 | True | IWP-SUB-02 |  |  |  |  |  |  |  |
| A-1237 | SUB.YARD.02 | Steel structure coating touch-up — SUB grade — bay B1 | WF-SUB-02 | SUB | structural | 2026-09-12T12:30:00-07:00 | 2026-09-14T08:48:00-07:00 | 6.3 | 0.63 | CAL-6x10 | 4 | 2026-09-12T12:30:00-07:00 | 2026-09-14T08:48:00-07:00 | 2026-09-14T08:30:00-07:00 | 2026-09-14T14:48:00-07:00 | 0.6 | 0.0 | True | IWP-SUB-02 | coating_epoxy_structural_steel | True | 947.5 | m2 |  |  |  |
| A-1238 | SUB.YARD.02 | Cable pull & termination — SUB grade — bay B1 | WF-SUB-02 | SUB | electrical | 2026-09-14T08:48:00-07:00 | 2026-09-17T14:42:00-07:00 | 35.9 | 3.59 | CAL-6x10 | 6 | 2026-09-14T08:48:00-07:00 | 2026-09-17T14:42:00-07:00 | 2026-09-14T14:48:00-07:00 | 2026-09-18T10:42:00-07:00 | 0.6 | 0.6 | True | IWP-SUB-02 |  |  |  |  |  | 2026-09-18T10:42:00-07:00 | MS-340 Substation energisation (utility coordinated) |
| A-1239 | SUB.YARD.03 | Excavation & duct bank — SUB L2 — bay A2 | WF-SUB-03 | SUB | sitework | 2026-08-27T14:00:00-07:00 | 2026-08-31T10:54:00-07:00 | 26.9 | 2.69 | CAL-6x10 | 6 | 2026-08-27T14:00:00-07:00 | 2026-08-31T10:54:00-07:00 | 2027-01-13T10:00:00-07:00 | 2027-01-16T06:54:00-07:00 | 112.6 | 0.0 |  | IWP-SUB-03 |  |  |  |  |  |  |  |
| A-1240 | SUB.YARD.03 | Duct bank encasement pour — SUB L2 — bay A2 | WF-SUB-03 | SUB | electrical | 2026-08-31T10:54:00-07:00 | 2026-09-01T09:24:00-07:00 | 8.5 | 0.85 | CAL-6x10 | 8 | 2026-08-31T10:54:00-07:00 | 2026-09-01T09:24:00-07:00 | 2027-01-16T06:54:00-07:00 | 2027-01-16T15:24:00-07:00 | 112.6 | 0.0 |  | IWP-SUB-03 | concrete_cip_hot_weather | True | 101.2 | m3 |  |  |  |
| A-1241 | SUB.YARD.03 | Transformer pad pour — SUB L2 — bay A2 | WF-SUB-03 | SUB | structural | 2026-09-03T13:24:00-07:00 | 2026-09-04T12:18:00-07:00 | 8.9 | 0.89 | CAL-6x10 | 10 | 2026-09-03T13:24:00-07:00 | 2026-09-04T12:18:00-07:00 | 2027-01-20T09:24:00-07:00 | 2027-01-21T08:18:00-07:00 | 112.6 | 0.0 |  | IWP-SUB-03 | concrete_cip_hot_weather | True | 156.0 | m3 |  |  |  |
| A-1242 | SUB.YARD.03 | Anchor & baseplate grout — SUB L2 — bay A2 | WF-SUB-03 | SUB | structural | 2026-09-09T06:18:00-07:00 | 2026-09-09T10:42:00-07:00 | 4.4 | 0.44 | CAL-6x10 | 3 | 2026-09-09T06:18:00-07:00 | 2026-09-09T10:42:00-07:00 | 2027-01-23T12:18:00-07:00 | 2027-01-25T06:42:00-07:00 | 112.6 | 0.0 |  | IWP-SUB-03 | adhesive_anchor_epoxy | True | 97.6 | ea |  |  |  |
| A-1243 | SUB.YARD.03 | Switchgear set — SUB L2 — bay A2 | WF-SUB-03 | SUB | electrical | 2026-09-09T10:42:00-07:00 | 2026-09-11T12:30:00-07:00 | 21.8 | 2.18 | CAL-6x10 | 5 | 2026-09-09T10:42:00-07:00 | 2026-09-11T12:30:00-07:00 | 2027-01-25T06:42:00-07:00 | 2027-01-27T08:30:00-07:00 | 112.6 | 0.0 |  | IWP-SUB-03 |  |  |  |  |  |  |  |
| A-1244 | SUB.YARD.03 | Steel structure coating touch-up — SUB L2 — bay A2 | WF-SUB-03 | SUB | structural | 2026-09-11T12:30:00-07:00 | 2026-09-12T08:30:00-07:00 | 6.0 | 0.6 | CAL-6x10 | 4 | 2026-09-11T12:30:00-07:00 | 2026-09-12T08:30:00-07:00 | 2027-01-27T08:30:00-07:00 | 2027-01-27T14:30:00-07:00 | 112.6 | 0.0 |  | IWP-SUB-03 | coating_epoxy_structural_steel | True | 902.5 | m2 |  |  |  |
| A-1245 | SUB.YARD.03 | Cable pull & termination — SUB L2 — bay A2 | WF-SUB-03 | SUB | electrical | 2026-09-12T08:30:00-07:00 | 2026-09-17T13:24:00-07:00 | 44.9 | 4.49 | CAL-6x10 | 6 | 2026-09-12T08:30:00-07:00 | 2026-09-17T13:24:00-07:00 | 2027-01-27T14:30:00-07:00 | 2027-02-02T09:24:00-07:00 | 112.6 | 112.6 |  | IWP-SUB-03 |  |  |  |  |  |  |  |
| A-1246 | BULK.CMU.01 | Footing excavation — BULK grade — bay A1 | WF-BULK-01 | BULK | sitework | 2026-08-26T07:00:00-07:00 | 2026-08-27T11:36:00-07:00 | 14.6 | 1.46 | CAL-6x10 | 4 | 2026-08-26T07:00:00-07:00 | 2026-08-27T11:36:00-07:00 | 2027-01-09T08:36:00-07:00 | 2027-01-11T13:12:00-07:00 | 111.16 | 0.0 |  | IWP-BULK-01 |  |  |  |  |  |  |  |
| A-1247 | BULK.CMU.01 | Foundation pour — BULK grade — bay A1 | WF-BULK-01 | BULK | structural | 2026-08-27T11:36:00-07:00 | 2026-08-28T10:12:00-07:00 | 8.6 | 0.86 | CAL-6x10 | 10 | 2026-08-27T11:36:00-07:00 | 2026-08-28T10:12:00-07:00 | 2027-01-11T13:12:00-07:00 | 2027-01-12T11:48:00-07:00 | 111.16 | 0.0 |  | IWP-BULK-01 | concrete_cip_hot_weather | True | 193.8 | m3 | City of Phoenix inspector — reinforcing & embed inspection prior to pour |  |  |
| A-1248 | BULK.CMU.01 | CMU wall construction — BULK grade — bay A1 | WF-BULK-01 | BULK | architectural | 2026-09-03T08:12:00-07:00 | 2026-09-04T07:36:00-07:00 | 9.4 | 0.94 | CAL-6x10 | 8 | 2026-09-03T08:12:00-07:00 | 2026-09-04T07:36:00-07:00 | 2027-01-18T09:48:00-07:00 | 2027-01-19T09:12:00-07:00 | 111.16 | 0.0 |  | IWP-BULK-01 | masonry_cmu_hot_weather | True | 987.5 | m2 |  |  |  |
| A-1249 | BULK.CMU.01 | Bond beam & cell grouting — BULK grade — bay A1 | WF-BULK-01 | BULK | structural | 2026-09-04T07:36:00-07:00 | 2026-09-05T06:12:00-07:00 | 8.6 | 0.86 | CAL-6x10 | 6 | 2026-09-04T07:36:00-07:00 | 2026-09-05T06:12:00-07:00 | 2027-01-19T09:12:00-07:00 | 2027-01-20T07:48:00-07:00 | 111.16 | 0.0 |  | IWP-BULK-01 | concrete_cip_hot_weather | True | 48.4 | m3 |  |  |  |
| A-1250 | BULK.CMU.01 | Steel lintel & joist weld — BULK grade — bay A1 | WF-BULK-01 | BULK | structural | 2026-09-05T06:12:00-07:00 | 2026-09-05T13:24:00-07:00 | 7.2 | 0.72 | CAL-6x10 | 4 | 2026-09-05T06:12:00-07:00 | 2026-09-05T13:24:00-07:00 | 2027-01-20T07:48:00-07:00 | 2027-01-20T15:00:00-07:00 | 111.16 | 0.0 |  | IWP-BULK-01 | structural_welding_preheat | True | 54.2 | ea |  |  |  |
| A-1251 | BULK.CMU.01 | Roof deck & waterproofing — BULK grade — bay A1 | WF-BULK-01 | BULK | architectural | 2026-09-05T13:24:00-07:00 | 2026-09-10T11:42:00-07:00 | 28.3 | 2.83 | CAL-6x10 | 6 | 2026-09-05T13:24:00-07:00 | 2026-09-10T11:42:00-07:00 | 2027-01-20T15:00:00-07:00 | 2027-01-23T13:18:00-07:00 | 111.16 | 0.0 |  | IWP-BULK-01 |  |  |  |  |  |  |  |
| A-1252 | BULK.CMU.01 | Perimeter joint sealant — BULK grade — bay A1 | WF-BULK-01 | BULK | architectural | 2026-09-12T15:42:00-07:00 | 2026-09-14T12:18:00-07:00 | 6.6 | 0.66 | CAL-6x10 | 4 | 2026-09-12T15:42:00-07:00 | 2026-09-14T12:18:00-07:00 | 2027-01-27T07:18:00-07:00 | 2027-01-27T13:54:00-07:00 | 111.16 | 0.0 |  | IWP-BULK-01 | sealant_silicone_weatherseal | True | 2155.6 | lf |  |  |  |
| A-1253 | BULK.CMU.01 | Interior fit-out — BULK grade — bay A1 | WF-BULK-01 | BULK | architectural | 2026-09-14T12:18:00-07:00 | 2026-09-19T07:48:00-07:00 | 45.5 | 4.55 | CAL-6x10 | 6 | 2026-09-14T12:18:00-07:00 | 2026-09-19T07:48:00-07:00 | 2027-01-27T13:54:00-07:00 | 2027-02-02T09:24:00-07:00 | 111.16 | 111.16 |  | IWP-BULK-01 |  |  |  |  |  |  |  |
| A-1254 | BULK.CMU.02 | Footing excavation — BULK grade — bay B1 | WF-BULK-02 | BULK | sitework | 2026-08-26T07:00:00-07:00 | 2026-08-27T13:54:00-07:00 | 16.9 | 1.69 | CAL-6x10 | 4 | 2026-08-26T07:00:00-07:00 | 2026-08-27T13:54:00-07:00 | 2027-01-11T07:06:00-07:00 | 2027-01-12T14:00:00-07:00 | 112.01 | 0.0 |  | IWP-BULK-02 |  |  |  |  |  |  |  |
| A-1255 | BULK.CMU.02 | Foundation pour — BULK grade — bay B1 | WF-BULK-02 | BULK | structural | 2026-08-27T13:54:00-07:00 | 2026-08-28T12:12:00-07:00 | 8.3 | 0.83 | CAL-6x10 | 10 | 2026-08-27T13:54:00-07:00 | 2026-08-28T12:12:00-07:00 | 2027-01-12T14:00:00-07:00 | 2027-01-13T12:18:00-07:00 | 112.01 | 0.0 |  | IWP-BULK-02 | concrete_cip_hot_weather | True | 187.2 | m3 |  |  |  |
| A-1256 | BULK.CMU.02 | CMU wall construction — BULK grade — bay B1 | WF-BULK-02 | BULK | architectural | 2026-09-03T10:12:00-07:00 | 2026-09-04T08:42:00-07:00 | 8.5 | 0.85 | CAL-6x10 | 8 | 2026-09-03T10:12:00-07:00 | 2026-09-04T08:42:00-07:00 | 2027-01-19T10:18:00-07:00 | 2027-01-20T08:48:00-07:00 | 112.01 | 0.0 |  | IWP-BULK-02 | masonry_cmu_hot_weather | True | 901.4 | m2 |  |  |  |
| A-1257 | BULK.CMU.02 | Bond beam & cell grouting — BULK grade — bay B1 | WF-BULK-02 | BULK | structural | 2026-09-04T08:42:00-07:00 | 2026-09-05T07:30:00-07:00 | 8.8 | 0.88 | CAL-6x10 | 6 | 2026-09-04T08:42:00-07:00 | 2026-09-05T07:30:00-07:00 | 2027-01-20T08:48:00-07:00 | 2027-01-21T07:36:00-07:00 | 112.01 | 0.0 |  | IWP-BULK-02 | concrete_cip_hot_weather | True | 49.7 | m3 |  |  |  |
| A-1258 | BULK.CMU.02 | Steel lintel & joist weld — BULK grade — bay B1 | WF-BULK-02 | BULK | structural | 2026-09-05T07:30:00-07:00 | 2026-09-05T14:42:00-07:00 | 7.2 | 0.72 | CAL-6x10 | 4 | 2026-09-05T07:30:00-07:00 | 2026-09-05T14:42:00-07:00 | 2027-01-21T07:36:00-07:00 | 2027-01-21T14:48:00-07:00 | 112.01 | 0.0 |  | IWP-BULK-02 | structural_welding_preheat | True | 54.1 | ea |  |  |  |
| A-1259 | BULK.CMU.02 | Roof deck & waterproofing — BULK grade — bay B1 | WF-BULK-02 | BULK | architectural | 2026-09-05T14:42:00-07:00 | 2026-09-10T07:00:00-07:00 | 22.3 | 2.23 | CAL-6x10 | 6 | 2026-09-05T14:42:00-07:00 | 2026-09-10T07:00:00-07:00 | 2027-01-21T14:48:00-07:00 | 2027-01-25T07:06:00-07:00 | 112.01 | 0.0 |  | IWP-BULK-02 |  |  |  |  |  |  |  |
| A-1260 | BULK.CMU.02 | Perimeter joint sealant — BULK grade — bay B1 | WF-BULK-02 | BULK | architectural | 2026-09-12T11:00:00-07:00 | 2026-09-14T08:36:00-07:00 | 7.6 | 0.76 | CAL-6x10 | 4 | 2026-09-12T11:00:00-07:00 | 2026-09-14T08:36:00-07:00 | 2027-01-27T11:06:00-07:00 | 2027-01-28T08:42:00-07:00 | 112.01 | 0.0 |  | IWP-BULK-02 | sealant_silicone_weatherseal | True | 2502.0 | lf |  |  |  |
| A-1261 | BULK.CMU.02 | Interior fit-out — BULK grade — bay B1 | WF-BULK-02 | BULK | architectural | 2026-09-14T08:36:00-07:00 | 2026-09-18T09:18:00-07:00 | 40.7 | 4.07 | CAL-6x10 | 6 | 2026-09-14T08:36:00-07:00 | 2026-09-18T09:18:00-07:00 | 2027-01-28T08:42:00-07:00 | 2027-02-02T09:24:00-07:00 | 112.01 | 112.01 |  | IWP-BULK-02 |  |  |  |  |  |  |  |
| A-1262 | BULK.CMU.03 | Footing excavation — BULK L2 — bay A2 | WF-BULK-03 | BULK | sitework | 2026-08-26T11:00:00-07:00 | 2026-08-27T14:18:00-07:00 | 13.3 | 1.33 | CAL-6x10 | 4 | 2026-08-26T11:00:00-07:00 | 2026-08-27T14:18:00-07:00 | 2027-01-09T09:42:00-07:00 | 2027-01-11T13:00:00-07:00 | 110.87 | 0.0 |  | IWP-BULK-03 |  |  |  |  |  |  |  |
| A-1263 | BULK.CMU.03 | Foundation pour — BULK L2 — bay A2 | WF-BULK-03 | BULK | structural | 2026-08-27T14:18:00-07:00 | 2026-08-28T12:30:00-07:00 | 8.2 | 0.82 | CAL-6x10 | 10 | 2026-08-27T14:18:00-07:00 | 2026-08-28T12:30:00-07:00 | 2027-01-11T13:00:00-07:00 | 2027-01-12T11:12:00-07:00 | 110.87 | 0.0 |  | IWP-BULK-03 | concrete_cip_hot_weather | True | 184.4 | m3 |  |  |  |
| A-1264 | BULK.CMU.03 | CMU wall construction — BULK L2 — bay A2 | WF-BULK-03 | BULK | architectural | 2026-09-03T10:30:00-07:00 | 2026-09-04T10:36:00-07:00 | 10.1 | 1.01 | CAL-6x10 | 8 | 2026-09-03T10:30:00-07:00 | 2026-09-04T10:36:00-07:00 | 2027-01-18T09:12:00-07:00 | 2027-01-19T09:18:00-07:00 | 110.87 | 0.0 |  | IWP-BULK-03 | masonry_cmu_hot_weather | True | 1064.4 | m2 |  |  |  |
| A-1265 | BULK.CMU.03 | Bond beam & cell grouting — BULK L2 — bay A2 | WF-BULK-03 | BULK | structural | 2026-09-04T10:36:00-07:00 | 2026-09-05T09:54:00-07:00 | 9.3 | 0.93 | CAL-6x10 | 6 | 2026-09-04T10:36:00-07:00 | 2026-09-05T09:54:00-07:00 | 2027-01-19T09:18:00-07:00 | 2027-01-20T08:36:00-07:00 | 110.87 | 0.0 |  | IWP-BULK-03 | concrete_cip_hot_weather | True | 52.4 | m3 |  |  |  |
| A-1266 | BULK.CMU.03 | Steel lintel & joist weld — BULK L2 — bay A2 | WF-BULK-03 | BULK | structural | 2026-09-05T09:54:00-07:00 | 2026-09-08T07:00:00-07:00 | 7.1 | 0.71 | CAL-6x10 | 4 | 2026-09-05T09:54:00-07:00 | 2026-09-08T07:00:00-07:00 | 2027-01-20T08:36:00-07:00 | 2027-01-20T15:42:00-07:00 | 110.87 | 0.0 |  | IWP-BULK-03 | structural_welding_preheat | True | 53.1 | ea |  |  |  |
| A-1267 | BULK.CMU.03 | Roof deck & waterproofing — BULK L2 — bay A2 | WF-BULK-03 | BULK | architectural | 2026-09-08T07:00:00-07:00 | 2026-09-10T14:00:00-07:00 | 27.0 | 2.7 | CAL-6x10 | 6 | 2026-09-08T07:00:00-07:00 | 2026-09-10T14:00:00-07:00 | 2027-01-20T15:42:00-07:00 | 2027-01-23T12:42:00-07:00 | 110.87 | 0.0 |  | IWP-BULK-03 |  |  |  |  |  |  |  |
| A-1268 | BULK.CMU.03 | Perimeter joint sealant — BULK L2 — bay A2 | WF-BULK-03 | BULK | architectural | 2026-09-14T08:00:00-07:00 | 2026-09-14T15:30:00-07:00 | 7.5 | 0.75 | CAL-6x10 | 4 | 2026-09-14T08:00:00-07:00 | 2026-09-14T15:30:00-07:00 | 2027-01-27T06:42:00-07:00 | 2027-01-27T14:12:00-07:00 | 110.87 | 0.0 |  | IWP-BULK-03 | sealant_silicone_weatherseal | True | 2471.6 | lf |  |  |  |
| A-1269 | BULK.CMU.03 | Interior fit-out — BULK L2 — bay A2 | WF-BULK-03 | BULK | architectural | 2026-09-14T15:30:00-07:00 | 2026-09-19T10:42:00-07:00 | 45.2 | 4.52 | CAL-6x10 | 6 | 2026-09-14T15:30:00-07:00 | 2026-09-19T10:42:00-07:00 | 2027-01-27T14:12:00-07:00 | 2027-02-02T09:24:00-07:00 | 110.87 | 110.87 |  | IWP-BULK-03 |  |  |  |  |  |  |  |
| A-1270 | CHEM.CMU.01 | Footing excavation — CHEM grade — bay A1 | WF-CHEM-01 | CHEM | sitework | 2026-08-26T10:00:00-07:00 | 2026-08-27T13:00:00-07:00 | 13.0 | 1.3 | CAL-6x10 | 4 | 2026-08-26T10:00:00-07:00 | 2026-08-27T13:00:00-07:00 | 2027-01-11T14:06:00-07:00 | 2027-01-13T07:06:00-07:00 | 112.41 | 0.0 |  | IWP-CHEM-01 |  |  |  |  |  |  |  |
| A-1271 | CHEM.CMU.01 | Foundation pour — CHEM grade — bay A1 | WF-CHEM-01 | CHEM | structural | 2026-08-27T13:00:00-07:00 | 2026-08-28T10:54:00-07:00 | 7.9 | 0.79 | CAL-6x10 | 10 | 2026-08-27T13:00:00-07:00 | 2026-08-28T10:54:00-07:00 | 2027-01-13T07:06:00-07:00 | 2027-01-13T15:00:00-07:00 | 112.41 | 0.0 |  | IWP-CHEM-01 | concrete_cip_hot_weather | True | 178.3 | m3 |  |  |  |
| A-1272 | CHEM.CMU.01 | CMU wall construction — CHEM grade — bay A1 | WF-CHEM-01 | CHEM | architectural | 2026-09-03T08:54:00-07:00 | 2026-09-04T07:48:00-07:00 | 8.9 | 0.89 | CAL-6x10 | 8 | 2026-09-03T08:54:00-07:00 | 2026-09-04T07:48:00-07:00 | 2027-01-19T13:00:00-07:00 | 2027-01-20T11:54:00-07:00 | 112.41 | 0.0 |  | IWP-CHEM-01 | masonry_cmu_hot_weather | True | 936.3 | m2 |  |  |  |
| A-1273 | CHEM.CMU.01 | Bond beam & cell grouting — CHEM grade — bay A1 | WF-CHEM-01 | CHEM | structural | 2026-09-04T07:48:00-07:00 | 2026-09-05T07:24:00-07:00 | 9.6 | 0.96 | CAL-6x10 | 6 | 2026-09-04T07:48:00-07:00 | 2026-09-05T07:24:00-07:00 | 2027-01-20T11:54:00-07:00 | 2027-01-21T11:30:00-07:00 | 112.41 | 0.0 |  | IWP-CHEM-01 | concrete_cip_hot_weather | True | 53.8 | m3 |  |  |  |
| A-1274 | CHEM.CMU.01 | Steel lintel & joist weld — CHEM grade — bay A1 | WF-CHEM-01 | CHEM | structural | 2026-09-05T07:24:00-07:00 | 2026-09-05T15:06:00-07:00 | 7.7 | 0.77 | CAL-6x10 | 4 | 2026-09-05T07:24:00-07:00 | 2026-09-05T15:06:00-07:00 | 2027-01-21T11:30:00-07:00 | 2027-01-22T09:12:00-07:00 | 112.41 | 0.0 |  | IWP-CHEM-01 | structural_welding_preheat | True | 57.5 | ea |  |  |  |
| A-1275 | CHEM.CMU.01 | Roof deck & waterproofing — CHEM grade — bay A1 | WF-CHEM-01 | CHEM | architectural | 2026-09-05T15:06:00-07:00 | 2026-09-10T06:24:00-07:00 | 21.3 | 2.13 | CAL-6x10 | 6 | 2026-09-05T15:06:00-07:00 | 2026-09-10T06:24:00-07:00 | 2027-01-22T09:12:00-07:00 | 2027-01-25T10:30:00-07:00 | 112.41 | 0.0 |  | IWP-CHEM-01 |  |  |  |  |  |  |  |
| A-1276 | CHEM.CMU.01 | Perimeter joint sealant — CHEM grade — bay A1 | WF-CHEM-01 | CHEM | architectural | 2026-09-12T10:24:00-07:00 | 2026-09-14T08:30:00-07:00 | 8.1 | 0.81 | CAL-6x10 | 4 | 2026-09-12T10:24:00-07:00 | 2026-09-14T08:30:00-07:00 | 2027-01-27T14:30:00-07:00 | 2027-01-28T12:36:00-07:00 | 112.41 | 0.0 |  | IWP-CHEM-01 | sealant_silicone_weatherseal | True | 2651.0 | lf |  |  |  |
| A-1277 | CHEM.CMU.01 | Interior fit-out — CHEM grade — bay A1 | WF-CHEM-01 | CHEM | architectural | 2026-09-14T08:30:00-07:00 | 2026-09-17T15:18:00-07:00 | 36.8 | 3.68 | CAL-6x10 | 6 | 2026-09-14T08:30:00-07:00 | 2026-09-17T15:18:00-07:00 | 2027-01-28T12:36:00-07:00 | 2027-02-02T09:24:00-07:00 | 112.41 | 112.41 |  | IWP-CHEM-01 |  |  |  |  |  |  |  |
| A-1278 | CHEM.CMU.02 | Footing excavation — CHEM grade — bay B1 | WF-CHEM-02 | CHEM | sitework | 2026-08-26T14:00:00-07:00 | 2026-08-28T07:00:00-07:00 | 13.0 | 1.3 | CAL-6x10 | 4 | 2026-08-26T14:00:00-07:00 | 2026-08-28T07:00:00-07:00 | 2027-01-11T06:30:00-07:00 | 2027-01-12T09:30:00-07:00 | 111.25 | 0.0 |  | IWP-CHEM-02 |  |  |  |  |  |  |  |
| A-1279 | CHEM.CMU.02 | Foundation pour — CHEM grade — bay B1 | WF-CHEM-02 | CHEM | structural | 2026-08-28T07:00:00-07:00 | 2026-08-29T06:06:00-07:00 | 9.1 | 0.91 | CAL-6x10 | 10 | 2026-08-28T07:00:00-07:00 | 2026-08-29T06:06:00-07:00 | 2027-01-12T09:30:00-07:00 | 2027-01-13T08:36:00-07:00 | 111.25 | 0.0 |  | IWP-CHEM-02 | concrete_cip_hot_weather | True | 205.8 | m3 |  |  |  |
| A-1280 | CHEM.CMU.02 | CMU wall construction — CHEM grade — bay B1 | WF-CHEM-02 | CHEM | architectural | 2026-09-03T14:06:00-07:00 | 2026-09-04T14:00:00-07:00 | 9.9 | 0.99 | CAL-6x10 | 8 | 2026-09-03T14:06:00-07:00 | 2026-09-04T14:00:00-07:00 | 2027-01-19T06:36:00-07:00 | 2027-01-20T06:30:00-07:00 | 111.25 | 0.0 |  | IWP-CHEM-02 | masonry_cmu_hot_weather | True | 1049.9 | m2 |  |  |  |

| id | wbs | name | work_face_id | structure_id | discipline | planned_start | planned_finish | duration_h | duration_d | calendar_id | crew_size | early_start | early_finish | late_start | late_finish | total_float_d | free_float_d | iwp_id | trade_id | thermal_sensitive | quantity | quantity_unit | hold_point | is_critical |
| --- | --- | --- | --- | --- | --- | --- | --- | --- | --- | --- | --- | --- | --- | --- | --- | --- | --- | --- | --- | --- | --- | --- | --- | --- |
| A-1281 | CHEM.CMU.02 | Bond beam & cell grouting — CHEM grade — bay B1 | WF-CHEM-02 | CHEM | structural | 2026-09-04T14:00:00-07:00 | 2026-09-05T13:18:00-07:00 | 9.3 | 0.93 | CAL-6x10 | 6 | 2026-09-04T14:00:00-07:00 | 2026-09-05T13:18:00-07:00 | 2027-01-20T06:30:00-07:00 | 2027-01-20T15:48:00-07:00 | 111.25 | 0.0 | IWP-CHEM-02 | concrete_cip_hot_weather | True | 52.4 | m3 |  |  |
| A-1282 | CHEM.CMU.02 | Steel lintel & joist weld — CHEM grade — bay B1 | WF-CHEM-02 | CHEM | structural | 2026-09-05T13:18:00-07:00 | 2026-09-08T12:24:00-07:00 | 9.1 | 0.91 | CAL-6x10 | 4 | 2026-09-05T13:18:00-07:00 | 2026-09-08T12:24:00-07:00 | 2027-01-20T15:48:00-07:00 | 2027-01-21T14:54:00-07:00 | 111.25 | 0.0 | IWP-CHEM-02 | structural_welding_preheat | True | 68.2 | ea |  |  |
| A-1283 | CHEM.CMU.02 | Roof deck & waterproofing — CHEM grade — bay B1 | WF-CHEM-02 | CHEM | architectural | 2026-09-08T12:24:00-07:00 | 2026-09-11T09:42:00-07:00 | 27.3 | 2.73 | CAL-6x10 | 6 | 2026-09-08T12:24:00-07:00 | 2026-09-11T09:42:00-07:00 | 2027-01-21T14:54:00-07:00 | 2027-01-25T12:12:00-07:00 | 111.25 | 0.0 | IWP-CHEM-02 |  |  |  |  |  |  |
| A-1284 | CHEM.CMU.02 | Perimeter joint sealant — CHEM grade — bay B1 | WF-CHEM-02 | CHEM | architectural | 2026-09-14T13:42:00-07:00 | 2026-09-15T12:00:00-07:00 | 8.3 | 0.83 | CAL-6x10 | 4 | 2026-09-14T13:42:00-07:00 | 2026-09-15T12:00:00-07:00 | 2027-01-28T06:12:00-07:00 | 2027-01-28T14:30:00-07:00 | 111.25 | 0.0 | IWP-CHEM-02 | sealant_silicone_weatherseal | True | 2728.4 | lf |  |  |
| A-1285 | CHEM.CMU.02 | Interior fit-out — CHEM grade — bay B1 | WF-CHEM-02 | CHEM | architectural | 2026-09-15T12:00:00-07:00 | 2026-09-19T06:54:00-07:00 | 34.9 | 3.49 | CAL-6x10 | 6 | 2026-09-15T12:00:00-07:00 | 2026-09-19T06:54:00-07:00 | 2027-01-28T14:30:00-07:00 | 2027-02-02T09:24:00-07:00 | 111.25 | 111.25 | IWP-CHEM-02 |  |  |  |  |  |  |
| A-1286 | CHEM.CMU.03 | Footing excavation — CHEM L2 — bay A2 | WF-CHEM-03 | CHEM | sitework | 2026-08-29T12:00:00-07:00 | 2026-09-01T07:48:00-07:00 | 15.8 | 1.58 | CAL-6x10 | 4 | 2026-08-29T12:00:00-07:00 | 2026-09-01T07:48:00-07:00 | 2027-01-09T12:54:00-07:00 | 2027-01-12T08:42:00-07:00 | 108.09 | 0.0 | IWP-CHEM-03 |  |  |  |  |  |  |
| A-1287 | CHEM.CMU.03 | Foundation pour — CHEM L2 — bay A2 | WF-CHEM-03 | CHEM | structural | 2026-09-01T07:48:00-07:00 | 2026-09-01T15:48:00-07:00 | 8.0 | 0.8 | CAL-6x10 | 10 | 2026-09-01T07:48:00-07:00 | 2026-09-01T15:48:00-07:00 | 2027-01-12T08:42:00-07:00 | 2027-01-13T06:42:00-07:00 | 108.09 | 0.0 | IWP-CHEM-03 | concrete_cip_hot_weather | True | 179.2 | m3 |  |  |
| A-1288 | CHEM.CMU.03 | CMU wall construction — CHEM L2 — bay A2 | WF-CHEM-03 | CHEM | architectural | 2026-09-08T13:48:00-07:00 | 2026-09-09T12:06:00-07:00 | 8.3 | 0.83 | CAL-6x10 | 8 | 2026-09-08T13:48:00-07:00 | 2026-09-09T12:06:00-07:00 | 2027-01-18T14:42:00-07:00 | 2027-01-19T13:00:00-07:00 | 108.09 | 0.0 | IWP-CHEM-03 | masonry_cmu_hot_weather | True | 874.0 | m2 |  |  |
| A-1289 | CHEM.CMU.03 | Bond beam & cell grouting — CHEM L2 — bay A2 | WF-CHEM-03 | CHEM | structural | 2026-09-09T12:06:00-07:00 | 2026-09-10T11:42:00-07:00 | 9.6 | 0.96 | CAL-6x10 | 6 | 2026-09-09T12:06:00-07:00 | 2026-09-10T11:42:00-07:00 | 2027-01-19T13:00:00-07:00 | 2027-01-20T12:36:00-07:00 | 108.09 | 0.0 | IWP-CHEM-03 | concrete_cip_hot_weather | True | 53.8 | m3 |  |  |
| A-1290 | CHEM.CMU.03 | Steel lintel & joist weld — CHEM L2 — bay A2 | WF-CHEM-03 | CHEM | structural | 2026-09-10T11:42:00-07:00 | 2026-09-11T10:48:00-07:00 | 9.1 | 0.91 | CAL-6x10 | 4 | 2026-09-10T11:42:00-07:00 | 2026-09-11T10:48:00-07:00 | 2027-01-20T12:36:00-07:00 | 2027-01-21T11:42:00-07:00 | 108.09 | 0.0 | IWP-CHEM-03 | structural_welding_preheat | True | 68.0 | ea |  |  |
| A-1291 | CHEM.CMU.03 | Roof deck & waterproofing — CHEM L2 — bay A2 | WF-CHEM-03 | CHEM | architectural | 2026-09-11T10:48:00-07:00 | 2026-09-14T12:24:00-07:00 | 21.6 | 2.16 | CAL-6x10 | 6 | 2026-09-11T10:48:00-07:00 | 2026-09-14T12:24:00-07:00 | 2027-01-21T11:42:00-07:00 | 2027-01-23T13:18:00-07:00 | 108.09 | 0.0 | IWP-CHEM-03 |  |  |  |  |  |  |
| A-1292 | CHEM.CMU.03 | Perimeter joint sealant — CHEM L2 — bay A2 | WF-CHEM-03 | CHEM | architectural | 2026-09-17T06:24:00-07:00 | 2026-09-17T14:24:00-07:00 | 8.0 | 0.8 | CAL-6x10 | 4 | 2026-09-17T06:24:00-07:00 | 2026-09-17T14:24:00-07:00 | 2027-01-27T07:18:00-07:00 | 2027-01-27T15:18:00-07:00 | 108.09 | 0.0 | IWP-CHEM-03 | sealant_silicone_weatherseal | True | 2638.3 | lf |  |  |
| A-1293 | CHEM.CMU.03 | Interior fit-out — CHEM L2 — bay A2 | WF-CHEM-03 | CHEM | architectural | 2026-09-17T14:24:00-07:00 | 2026-09-23T08:30:00-07:00 | 44.1 | 4.41 | CAL-6x10 | 6 | 2026-09-17T14:24:00-07:00 | 2026-09-23T08:30:00-07:00 | 2027-01-27T15:18:00-07:00 | 2027-02-02T09:24:00-07:00 | 108.09 | 108.09 | IWP-CHEM-03 |  |  |  |  |  |  |
| A-1294 | ADMIN.CMU.01 | Footing excavation — ADMIN grade — bay A1 | WF-ADMIN-01 | ADMIN | sitework | 2026-10-12T14:00:00-07:00 | 2026-10-14T11:30:00-07:00 | 13.5 | 1.69 | CAL-5x8 | 4 | 2026-10-12T14:00:00-07:00 | 2026-10-14T11:30:00-07:00 | 2027-04-29T09:42:00-07:00 | 2027-05-03T07:12:00-07:00 | 137.46 | 0.0 | IWP-ADMIN-01 |  |  |  |  |  |  |
| A-1295 | ADMIN.CMU.01 | Foundation pour — ADMIN grade — bay A1 | WF-ADMIN-01 | ADMIN | structural | 2026-10-14T11:30:00-07:00 | 2026-10-15T11:00:00-07:00 | 7.5 | 0.94 | CAL-5x8 | 10 | 2026-10-14T11:30:00-07:00 | 2026-10-15T11:00:00-07:00 | 2027-05-03T07:12:00-07:00 | 2027-05-03T14:42:00-07:00 | 137.46 | 0.0 | IWP-ADMIN-01 | concrete_cip_hot_weather | True | 168.0 | m3 |  |  |
| A-1296 | ADMIN.CMU.01 | CMU wall construction — ADMIN grade — bay A1 | WF-ADMIN-01 | ADMIN | architectural | 2026-10-23T11:00:00-07:00 | 2026-10-26T10:42:00-07:00 | 7.7 | 0.96 | CAL-5x8 | 8 | 2026-10-23T11:00:00-07:00 | 2026-10-26T10:42:00-07:00 | 2027-05-11T14:42:00-07:00 | 2027-05-12T14:24:00-07:00 | 137.46 | 0.0 | IWP-ADMIN-01 | masonry_cmu_hot_weather | True | 810.7 | m2 |  |  |
| A-1297 | ADMIN.CMU.01 | Bond beam & cell grouting — ADMIN grade — bay A1 | WF-ADMIN-01 | ADMIN | structural | 2026-10-26T10:42:00-07:00 | 2026-10-27T10:54:00-07:00 | 8.2 | 1.02 | CAL-5x8 | 6 | 2026-10-26T10:42:00-07:00 | 2026-10-27T10:54:00-07:00 | 2027-05-12T14:24:00-07:00 | 2027-05-13T14:36:00-07:00 | 137.46 | 0.0 | IWP-ADMIN-01 | concrete_cip_hot_weather | True | 45.9 | m3 |  |  |
| A-1298 | ADMIN.CMU.01 | Steel lintel & joist weld — ADMIN grade — bay A1 | WF-ADMIN-01 | ADMIN | structural | 2026-10-27T10:54:00-07:00 | 2026-10-28T12:30:00-07:00 | 9.6 | 1.2 | CAL-5x8 | 4 | 2026-10-27T10:54:00-07:00 | 2026-10-28T12:30:00-07:00 | 2027-05-13T14:36:00-07:00 | 2027-05-17T08:12:00-07:00 | 137.46 | 0.0 | IWP-ADMIN-01 | structural_welding_preheat | True | 71.7 | ea |  |  |
| A-1299 | ADMIN.CMU.01 | Roof deck & waterproofing — ADMIN grade — bay A1 | WF-ADMIN-01 | ADMIN | architectural | 2026-10-28T12:30:00-07:00 | 2026-11-02T12:36:00-07:00 | 24.1 | 3.01 | CAL-5x8 | 6 | 2026-10-28T12:30:00-07:00 | 2026-11-02T12:36:00-07:00 | 2027-05-17T08:12:00-07:00 | 2027-05-20T08:18:00-07:00 | 137.46 | 0.0 | IWP-ADMIN-01 |  |  |  |  |  |  |
| A-1300 | ADMIN.CMU.01 | Perimeter joint sealant — ADMIN grade — bay A1 | WF-ADMIN-01 | ADMIN | architectural | 2026-11-05T12:36:00-07:00 | 2026-11-06T12:12:00-07:00 | 7.6 | 0.95 | CAL-5x8 | 4 | 2026-11-05T12:36:00-07:00 | 2026-11-06T12:12:00-07:00 | 2027-05-25T08:18:00-07:00 | 2027-05-26T07:54:00-07:00 | 137.46 | 0.0 | IWP-ADMIN-01 | sealant_silicone_weatherseal | True | 2506.0 | lf |  |  |
| A-1301 | ADMIN.CMU.01 | Interior fit-out — ADMIN grade — bay A1 | WF-ADMIN-01 | ADMIN | architectural | 2026-11-06T12:12:00-07:00 | 2026-11-13T14:42:00-07:00 | 42.5 | 5.31 | CAL-5x8 | 6 | 2026-11-06T12:12:00-07:00 | 2026-11-13T14:42:00-07:00 | 2027-05-26T07:54:00-07:00 | 2027-06-02T10:24:00-07:00 | 137.46 | 137.46 | IWP-ADMIN-01 |  |  |  |  |  |  |
| A-1302 | ADMIN.CMU.02 | Footing excavation — ADMIN grade — bay B1 | WF-ADMIN-02 | ADMIN | sitework | 2026-10-13T14:00:00-07:00 | 2026-10-15T11:36:00-07:00 | 13.6 | 1.7 | CAL-5x8 | 4 | 2026-10-13T14:00:00-07:00 | 2026-10-15T11:36:00-07:00 | 2027-04-28T12:42:00-07:00 | 2027-04-30T10:18:00-07:00 | 135.84 | 0.0 | IWP-ADMIN-02 |  |  |  |  |  |  |
| A-1303 | ADMIN.CMU.02 | Foundation pour — ADMIN grade — bay B1 | WF-ADMIN-02 | ADMIN | structural | 2026-10-15T11:36:00-07:00 | 2026-10-16T11:00:00-07:00 | 7.4 | 0.93 | CAL-5x8 | 10 | 2026-10-15T11:36:00-07:00 | 2026-10-16T11:00:00-07:00 | 2027-04-30T10:18:00-07:00 | 2027-05-03T09:42:00-07:00 | 135.84 | 0.0 | IWP-ADMIN-02 | concrete_cip_hot_weather | True | 167.2 | m3 |  |  |
| A-1304 | ADMIN.CMU.02 | CMU wall construction — ADMIN grade — bay B1 | WF-ADMIN-02 | ADMIN | architectural | 2026-10-26T11:00:00-07:00 | 2026-10-27T12:06:00-07:00 | 9.1 | 1.14 | CAL-5x8 | 8 | 2026-10-26T11:00:00-07:00 | 2026-10-27T12:06:00-07:00 | 2027-05-11T09:42:00-07:00 | 2027-05-12T10:48:00-07:00 | 135.84 | 0.0 | IWP-ADMIN-02 | masonry_cmu_hot_weather | True | 962.8 | m2 |  |  |
| A-1305 | ADMIN.CMU.02 | Bond beam & cell grouting — ADMIN grade — bay B1 | WF-ADMIN-02 | ADMIN | structural | 2026-10-27T12:06:00-07:00 | 2026-10-28T11:48:00-07:00 | 7.7 | 0.96 | CAL-5x8 | 6 | 2026-10-27T12:06:00-07:00 | 2026-10-28T11:48:00-07:00 | 2027-05-12T10:48:00-07:00 | 2027-05-13T10:30:00-07:00 | 135.84 | 0.0 | IWP-ADMIN-02 | concrete_cip_hot_weather | True | 43.5 | m3 |  |  |
| A-1306 | ADMIN.CMU.02 | Steel lintel & joist weld — ADMIN grade — bay B1 | WF-ADMIN-02 | ADMIN | structural | 2026-10-28T11:48:00-07:00 | 2026-10-29T12:06:00-07:00 | 8.3 | 1.04 | CAL-5x8 | 4 | 2026-10-28T11:48:00-07:00 | 2026-10-29T12:06:00-07:00 | 2027-05-13T10:30:00-07:00 | 2027-05-14T10:48:00-07:00 | 135.84 | 0.0 | IWP-ADMIN-02 | structural_welding_preheat | True | 62.0 | ea |  |  |
| A-1307 | ADMIN.CMU.02 | Roof deck & waterproofing — ADMIN grade — bay B1 | WF-ADMIN-02 | ADMIN | architectural | 2026-10-29T12:06:00-07:00 | 2026-11-04T07:18:00-07:00 | 27.2 | 3.4 | CAL-5x8 | 6 | 2026-10-29T12:06:00-07:00 | 2026-11-04T07:18:00-07:00 | 2027-05-14T10:48:00-07:00 | 2027-05-19T14:00:00-07:00 | 135.84 | 0.0 | IWP-ADMIN-02 |  |  |  |  |  |  |
| A-1308 | ADMIN.CMU.02 | Perimeter joint sealant — ADMIN grade — bay B1 | WF-ADMIN-02 | ADMIN | architectural | 2026-11-09T07:18:00-07:00 | 2026-11-09T14:06:00-07:00 | 6.8 | 0.85 | CAL-5x8 | 4 | 2026-11-09T07:18:00-07:00 | 2026-11-09T14:06:00-07:00 | 2027-05-24T14:00:00-07:00 | 2027-05-25T12:48:00-07:00 | 135.84 | 0.0 | IWP-ADMIN-02 | sealant_silicone_weatherseal | True | 2227.7 | lf |  |  |
| A-1309 | ADMIN.CMU.02 | Interior fit-out — ADMIN grade — bay B1 | WF-ADMIN-02 | ADMIN | architectural | 2026-11-09T14:06:00-07:00 | 2026-11-17T11:42:00-07:00 | 45.6 | 5.7 | CAL-5x8 | 6 | 2026-11-09T14:06:00-07:00 | 2026-11-17T11:42:00-07:00 | 2027-05-25T12:48:00-07:00 | 2027-06-02T10:24:00-07:00 | 135.84 | 135.84 | IWP-ADMIN-02 |  |  |  |  |  |  |
| A-1310 | PARK.WAREHOUSE.01 | Subgrade & vapour barrier — PARK grade — bay A1 | WF-PARK-01 | PARK | sitework | 2026-09-05T07:00:00-07:00 | 2026-09-09T06:24:00-07:00 | 19.4 | 1.94 | CAL-6x10 | 5 | 2026-09-05T07:00:00-07:00 | 2026-09-09T06:24:00-07:00 | 2027-01-11T14:06:00-07:00 | 2027-01-13T13:30:00-07:00 | 103.71 | 0.0 | IWP-PARK-01 |  |  |  |  |  |  |
| A-1311 | PARK.WAREHOUSE.01 | Slab on grade pour — PARK grade — bay A1 | WF-PARK-01 | PARK | structural | 2026-09-09T06:24:00-07:00 | 2026-09-09T14:36:00-07:00 | 8.2 | 0.82 | CAL-6x10 | 12 | 2026-09-09T06:24:00-07:00 | 2026-09-09T14:36:00-07:00 | 2027-01-13T13:30:00-07:00 | 2027-01-14T11:42:00-07:00 | 103.71 | 0.0 | IWP-PARK-01 | concrete_cip_hot_weather | True | 431.4 | m3 |  |  |
| A-1312 | PARK.WAREHOUSE.01 | Precast panel erection — PARK grade — bay A1 | WF-PARK-01 | PARK | structural | 2026-09-18T06:36:00-07:00 | 2026-09-22T09:06:00-07:00 | 32.5 | 3.25 | CAL-6x10 | 8 | 2026-09-18T06:36:00-07:00 | 2026-09-22T09:06:00-07:00 | 2027-01-22T13:42:00-07:00 | 2027-01-27T06:12:00-07:00 | 103.71 | 0.0 | IWP-PARK-01 |  |  |  |  |  |  |
| A-1313 | PARK.WAREHOUSE.01 | Connection weld — PARK grade — bay A1 | WF-PARK-01 | PARK | structural | 2026-09-22T09:06:00-07:00 | 2026-09-23T06:30:00-07:00 | 7.4 | 0.74 | CAL-6x10 | 4 | 2026-09-22T09:06:00-07:00 | 2026-09-23T06:30:00-07:00 | 2027-01-27T06:12:00-07:00 | 2027-01-27T13:36:00-07:00 | 103.71 | 0.0 | IWP-PARK-01 | structural_welding_preheat | True | 128.7 | ea |  |  |
| A-1314 | PARK.WAREHOUSE.01 | Panel joint sealant — PARK grade — bay A1 | WF-PARK-01 | PARK | architectural | 2026-09-23T06:30:00-07:00 | 2026-09-23T12:30:00-07:00 | 6.0 | 0.6 | CAL-6x10 | 4 | 2026-09-23T06:30:00-07:00 | 2026-09-23T12:30:00-07:00 | 2027-01-27T13:36:00-07:00 | 2027-01-28T09:36:00-07:00 | 103.71 | 0.0 | IWP-PARK-01 | sealant_silicone_weatherseal | True | 1538.1 | lf |  |  |
| A-1315 | PARK.WAREHOUSE.01 | Spray-applied fireproofing — PARK grade — bay A1 | WF-PARK-01 | PARK | structural | 2026-09-23T12:30:00-07:00 | 2026-09-24T13:12:00-07:00 | 10.7 | 1.07 | CAL-6x10 | 6 | 2026-09-23T12:30:00-07:00 | 2026-09-24T13:12:00-07:00 | 2027-01-28T09:36:00-07:00 | 2027-01-29T10:18:00-07:00 | 103.71 | 0.0 | IWP-PARK-01 | sfrm_spray_applied_fireproofing | True | 2564.5 | m2 |  |  |
| A-1316 | PARK.WAREHOUSE.01 | Interior floor marking — PARK grade — bay A1 | WF-PARK-01 | PARK | architectural | 2026-09-28T07:12:00-07:00 | 2026-09-28T12:18:00-07:00 | 5.1 | 0.51 | CAL-6x10 | 4 | 2026-09-28T07:12:00-07:00 | 2026-09-28T12:18:00-07:00 | 2027-02-01T14:18:00-07:00 | 2027-02-02T09:24:00-07:00 | 103.71 | 103.71 | IWP-PARK-01 | pavement_marking_waterborne | True | 3272.6 | lf |  |  |
| A-1317 | PARK.WAREHOUSE.02 | Subgrade & vapour barrier — PARK grade — bay B1 | WF-PARK-02 | PARK | sitework | 2026-09-05T15:00:00-07:00 | 2026-09-10T06:00:00-07:00 | 21.0 | 2.1 | CAL-6x10 | 5 | 2026-09-05T15:00:00-07:00 | 2026-09-10T06:00:00-07:00 | 2027-01-11T09:12:00-07:00 | 2027-01-13T10:12:00-07:00 | 102.42 | 0.0 | IWP-PARK-02 |  |  |  |  |  |  |
| A-1318 | PARK.WAREHOUSE.02 | Slab on grade pour — PARK grade — bay B1 | WF-PARK-02 | PARK | structural | 2026-09-10T06:00:00-07:00 | 2026-09-10T12:54:00-07:00 | 6.9 | 0.69 | CAL-6x10 | 12 | 2026-09-10T06:00:00-07:00 | 2026-09-10T12:54:00-07:00 | 2027-01-13T10:12:00-07:00 | 2027-01-14T07:06:00-07:00 | 102.42 | 0.0 | IWP-PARK-02 | concrete_cip_hot_weather | True | 360.3 | m3 |  |  |
| A-1319 | PARK.WAREHOUSE.02 | Precast panel erection — PARK grade — bay B1 | WF-PARK-02 | PARK | structural | 2026-09-18T14:54:00-07:00 | 2026-09-23T10:12:00-07:00 | 35.3 | 3.53 | CAL-6x10 | 8 | 2026-09-18T14:54:00-07:00 | 2026-09-23T10:12:00-07:00 | 2027-01-22T09:06:00-07:00 | 2027-01-26T14:24:00-07:00 | 102.42 | 0.0 | IWP-PARK-02 |  |  |  |  |  |  |
| A-1320 | PARK.WAREHOUSE.02 | Connection weld — PARK grade — bay B1 | WF-PARK-02 | PARK | structural | 2026-09-23T10:12:00-07:00 | 2026-09-24T08:18:00-07:00 | 8.1 | 0.81 | CAL-6x10 | 4 | 2026-09-23T10:12:00-07:00 | 2026-09-24T08:18:00-07:00 | 2027-01-26T14:24:00-07:00 | 2027-01-27T12:30:00-07:00 | 102.42 | 0.0 | IWP-PARK-02 | structural_welding_preheat | True | 141.9 | ea |  |  |
| A-1321 | PARK.WAREHOUSE.02 | Panel joint sealant — PARK grade — bay B1 | WF-PARK-02 | PARK | architectural | 2026-09-24T08:18:00-07:00 | 2026-09-25T06:24:00-07:00 | 8.1 | 0.81 | CAL-6x10 | 4 | 2026-09-24T08:18:00-07:00 | 2026-09-25T06:24:00-07:00 | 2027-01-27T12:30:00-07:00 | 2027-01-28T10:36:00-07:00 | 102.42 | 0.0 | IWP-PARK-02 | sealant_silicone_weatherseal | True | 2073.4 | lf |  |  |
| A-1322 | PARK.WAREHOUSE.02 | Spray-applied fireproofing — PARK grade — bay B1 | WF-PARK-02 | PARK | structural | 2026-09-25T06:24:00-07:00 | 2026-09-26T06:48:00-07:00 | 10.4 | 1.04 | CAL-6x10 | 6 | 2026-09-25T06:24:00-07:00 | 2026-09-26T06:48:00-07:00 | 2027-01-28T10:36:00-07:00 | 2027-01-29T11:00:00-07:00 | 102.42 | 0.0 | IWP-PARK-02 | sfrm_spray_applied_fireproofing | True | 2504.4 | m2 | Special inspector — SFRM thickness & density verification |  |
| A-1323 | PARK.WAREHOUSE.02 | Interior floor marking — PARK grade — bay B1 | WF-PARK-02 | PARK | architectural | 2026-09-29T10:48:00-07:00 | 2026-09-29T15:12:00-07:00 | 4.4 | 0.44 | CAL-6x10 | 4 | 2026-09-29T10:48:00-07:00 | 2026-09-29T15:12:00-07:00 | 2027-02-01T15:00:00-07:00 | 2027-02-02T09:24:00-07:00 | 102.42 | 102.42 | IWP-PARK-02 | pavement_marking_waterborne | True | 2789.1 | lf |  |  |
| A-1324 | ROAD.PAVING.01 | Subgrade preparation — ROAD grade — bay A1 | WF-ROAD-01 | ROAD | sitework | 2027-01-15T13:00:00-07:00 | 2027-01-19T12:36:00-07:00 | 29.6 | 2.96 | CAL-6x10 | 6 | 2027-01-15T13:00:00-07:00 | 2027-01-19T12:36:00-07:00 | 2027-01-15T13:00:00-07:00 | 2027-01-19T12:36:00-07:00 | 0.0 | 0.0 | IWP-ROAD-01 |  |  |  |  |  | True |
| A-1325 | ROAD.PAVING.01 | Aggregate base course — ROAD grade — bay A1 | WF-ROAD-01 | ROAD | sitework | 2027-01-19T12:36:00-07:00 | 2027-01-21T14:42:00-07:00 | 22.1 | 2.21 | CAL-6x10 | 6 | 2027-01-19T12:36:00-07:00 | 2027-01-21T14:42:00-07:00 | 2027-01-19T12:36:00-07:00 | 2027-01-21T14:42:00-07:00 | 0.0 | 0.0 | IWP-ROAD-01 |  |  |  |  |  | True |
| A-1326 | ROAD.PAVING.01 | HMA base course — ROAD grade — bay A1 | WF-ROAD-01 | ROAD | sitework | 2027-01-21T14:42:00-07:00 | 2027-01-22T12:24:00-07:00 | 7.7 | 0.77 | CAL-6x10 | 10 | 2027-01-21T14:42:00-07:00 | 2027-01-22T12:24:00-07:00 | 2027-01-21T14:42:00-07:00 | 2027-01-22T12:24:00-07:00 | 0.0 | 0.0 | IWP-ROAD-01 | hma_paving_surface_course | True | 7341.0 | m2 |  | True |
| A-1327 | ROAD.PAVING.01 | HMA surface course — ROAD grade — bay A1 | WF-ROAD-01 | ROAD | sitework | 2027-01-26T06:24:00-07:00 | 2027-01-27T06:24:00-07:00 | 10.0 | 1.0 | CAL-6x10 | 10 | 2027-01-26T06:24:00-07:00 | 2027-01-27T06:24:00-07:00 | 2027-01-26T06:24:00-07:00 | 2027-01-27T06:24:00-07:00 | 0.0 | 0.0 | IWP-ROAD-01 | hma_paving_surface_course | True | 9525.9 | m2 |  | True |
| A-1328 | ROAD.PAVING.01 | Pavement marking & striping — ROAD grade — bay A1 | WF-ROAD-01 | ROAD | sitework | 2027-02-01T14:24:00-07:00 | 2027-02-02T09:24:00-07:00 | 5.0 | 0.5 | CAL-6x10 | 4 | 2027-02-01T14:24:00-07:00 | 2027-02-02T09:24:00-07:00 | 2027-02-01T14:24:00-07:00 | 2027-02-02T09:24:00-07:00 | 0.0 | 0.0 | IWP-ROAD-01 | pavement_marking_waterborne | True | 10938.4 | lf |  | True |
